# MPP_Template

Schedule from MS Project, 2008-01-30 to 2008-03-26.

## Calendars

- Standard: Mon-Fri 08:00-12:00, 13:00-17:00; Sat-Sun off.

## Resources

| Resource |
| --- |
| Project Manager |
| Project SQA |
| SCM |
| Team member 1 |
| Team member 2 |
| Team member 3 |
| Team member 4 |
| Team member 5 |
| Project Lead |
| Tech Lead |
| Program Manager |
| Lab Architect |
| Customer |
| Tech Writer |
| Project Director |
| Application Architect |
| Technical Architect |
| Acceptor |
| Quality Assurance Manager |
| Team Leader |
| Contracts Manager |
| Trainer |
| Reviewer |
| Peer |
| Reviewers |
| Developer |
| Developer & Peer |
| Tester |
| Facilities Engineer |
| Team Members |
| Project Team |
| 需求分析师 |

## Schedule

| ID | WBS | Task | Duration | Start | Finish | Total slack | Resources | Work | Text8 |
| --- | --- | --- | --- | --- | --- | --- | --- | --- | --- |
| 1 | 1 | **项目名称** | 40.5d? | 2008-01-30 08:00 | 2008-03-26 12:00 | 0d |  | 1546h |  |
| 2 | 1.1 | **V - Lifecycle** | 40.5d? | 2008-01-30 08:00 | 2008-03-26 12:00 | 0d |  | 1346h |  |
| 3 | 1.1.1 | **项目启动** | 2.5d? | 2008-01-30 08:00 | 2008-02-01 12:00 | 38d |  | 23h |  |
| 4 | 1.1.1.1 | 确定项目目标 | 1d? | 2008-01-30 08:00 | 2008-01-30 17:00 | 39.5d | Project Manager | 8h |  |
| 5 | 1.1.1.2 | 重新估算工作量 | 0.5d? | 2008-01-31 08:00 | 2008-01-31 12:00 | 39d | Project Manager | 4h |  |
| 6 | 1.1.1.3 | 评估并确认项目任务书 | 1d? | 2008-01-31 13:00 | 2008-02-01 12:00 | 38d | Project Manager | 8h |  |
| 7 | 1.1.1.4 | 项目交接会 | 0.38d? | 2008-01-30 08:00 | 2008-01-30 11:00 | 40.12d | Project Team | 3h |  |
| 8 | 1.1.2 | **策划** | 17.75d? | 2008-01-30 08:00 | 2008-02-22 15:00 | 22.75d |  | 188h |  |
| 9 | 1.1.2.1 | **定义范围** | 8d? | 2008-01-30 08:00 | 2008-02-08 17:00 | 32.5d |  | 60h | key:8 |
| 10 | 1.1.2.1.1 | 确定开发策略 | 1d? | 2008-01-30 08:00 | 2008-01-30 17:00 | 39.5d | Project Director | 8h | key:9 |
| 11 | 1.1.2.1.2 | 进行计划的沙盘演练 | 1d? | 2008-01-31 08:00 | 2008-01-31 17:00 | 38.5d | Project Director | 8h | key:10 |
| 12 | 1.1.2.1.3 | 收集过往相关经验 | 1d? | 2008-02-01 13:00 | 2008-02-04 12:00 | 37d | Project Manager | 8h | key:11 |
| 13 | 1.1.2.1.4 | 定义范围 | 0.5d? | 2008-02-04 13:00 | 2008-02-04 17:00 | 36.5d | Project Manager | 4h | key:12 |
| 14 | 1.1.2.1.5 | 制定总体WBS | 0.5d? | 2008-02-05 08:00 | 2008-02-05 12:00 | 36d | Project Manager | 4h | key:13 |
| 15 | 1.1.2.1.6 | 制定详细WBS | 2d? | 2008-02-05 13:00 | 2008-02-07 12:00 | 34d | Project Manager | 16h | key:14 |
| 16 | 1.1.2.1.7 | 计算项目成本 | 0.5d? | 2008-02-07 13:00 | 2008-02-07 17:00 | 33.5d | Project Manager | 4h | key:15 |
| 17 | 1.1.2.1.8 | 明确交付物和验收标准 | 0.5d? | 2008-02-08 08:00 | 2008-02-08 12:00 | 33d | Project Manager | 4h | key:16 |
| 18 | 1.1.2.1.9 | 明示假设条件 | 0.5d? | 2008-02-08 13:00 | 2008-02-08 17:00 | 32.5d | Project Manager | 4h | key:17 |
| 19 | 1.1.2.2 | **编写项目支持计划** | 3d? | 2008-02-11 08:00 | 2008-02-13 17:00 | 29.5d |  | 24h | key:18 |
| 20 | 1.1.2.2.1 | 编写项目风险管理计划 | 1d? | 2008-02-11 08:00 | 2008-02-11 17:00 | 31.5d | Project Manager | 8h | key:19 |
| 21 | 1.1.2.2.2 | 编写配置管理计划 | 1d? | 2008-02-12 08:00 | 2008-02-12 17:00 | 30.5d | Project Manager | 8h | key:20 |
| 22 | 1.1.2.2.3 | 编写数据管理计划 | 0.5d? | 2008-02-13 08:00 | 2008-02-13 12:00 | 30d | Project Manager | 4h | key:21 |
| 23 | 1.1.2.2.4 | 编写沟通管理计划 | 0.5d? | 2008-02-13 13:00 | 2008-02-13 17:00 | 29.5d | Project Manager | 4h | key:22 |
| 24 | 1.1.2.3 | **安排项目日程** | 2.5d? | 2008-02-14 08:00 | 2008-02-18 12:00 | 27d |  | 20h | key:23 |
| 25 | 1.1.2.3.1 | 开发资源计划 | 0.25d? | 2008-02-14 08:00 | 2008-02-14 10:00 | 29.25d | Project Manager | 2h | key:24 |
| 26 | 1.1.2.3.2 | 估算每项任务的资源 | 0.38d? | 2008-02-14 10:00 | 2008-02-14 14:00 | 28.88d | Project Manager | 3h | key:25 |
| 27 | 1.1.2.3.3 | 定义任务间的依赖关系、关键时间点（里程碑） | 0.5d? | 2008-02-14 14:00 | 2008-02-15 09:00 | 28.38d | Project Manager | 4h | key:26 |
| 28 | 1.1.2.3.4 | 记录假设条件 | 0.38d? | 2008-02-15 09:00 | 2008-02-15 12:00 | 28d | Project Manager | 3h | key:27 |
| 29 | 1.1.2.3.5 | 评审 | 1d? | 2008-02-15 13:00 | 2008-02-18 12:00 | 27d | Project Manager | 8h | key:28 |

Notes:
- 2: 本WBS是一个样本，各项目应该根据自己项目的实际情况，调整任务项及顺序。 / 特别应该注意：本WBS中列出的任务（task) 有否在你的日程中遗漏了。 / 请仔细阅读每个任务项前的备注
- 9: Establish the Project Scope, WBS and Deliverables necessary to ensure that the objectives defined in the Project Charter are met.
- 10: 角色：Project Director：对项目管理经验丰富的人员，也可以是部门经理。 / Understand the business organization and its personnel and formulate high level strategies and plans to ensure achievement of objectives.
- 11: Conduct an internal planning session to think through all elements of the project, identify the critical success factors, and map out the project approach.
- 12: Research previous experience with similar projects and with similar technologies and obtain sample materials.
- 13: Establish and maintain a common understanding with the customer of the scope of the project.
- 14: Completely identify all of the work to be performed and organize the work into manageable pieces (subprojects).
- 15: Model the project in terms of detailed phases, activities, tasks, deliverables, and resources.
- 16: Perform the cost/benefit analysis for the projects. Document the cash flows, (i.e., benefits minus costs). Document the benefits and risks that cannot be assigned a cash value.
- 17: Create a clear and unambiguous definition of each deliverable in terms of format, size and quality requirements, and specify the acceptance procedures and acceptance criteria for each deliverable.
- 18: Maintain an ongoing list of the assumptions on which the estimates and schedules are based.
- 19: Document the Risk, Configuration and Data Management Plans which will be used to define these aspects of the project delivery approach.
- 20: Describe the methods and procedures to be used to identify, evaluate, and eliminate or minimize project risks.
- 21: Describe the methods and procedures to be used to establish effective identification, control, accounting, and auditing of controlled items throughout the development life cycle.
- 22: Describe the methods and procedures to be used to implement and maintain a Data Management System for the identification, acquisition, distribution, delivery, and status reporting of data.
- 23: Describe the methods and procedures to be used to identify and document the project communications requirements.
- 24: Identify and assign project resources, determine project activity and task dependencies, develop task estimates develop the project schedule.
- 25: Identify resources (human and other) that will be required to successfully deliver the project
- 26: Produce a detailed estimates of the costs and material resources required to deliver each component of the Work Breakdown Structure.
- 27: Define the milestones and phase dates for each component of the Work Breakdown Structure, and identify the dependencies between the work components (the network logic).
- 28: Maintain an ongoing list of the assumptions on which the estimates and schedules are based.
- 29: Conduct a peer review session to solicit feedback on the project approach from senior delivery and management personnel from outside the project team.

| ID | WBS | Task | Duration | Start | Finish | Total slack | Resources | Work | Text8 |
| --- | --- | --- | --- | --- | --- | --- | --- | --- | --- |
| 30 | 1.1.2.4 | **制定费用计划** | 0.38d? | 2008-02-01 08:00 | 2008-02-01 11:00 | 38.12d |  | 3h | key:29 |
| 31 | 1.1.2.4.1 | 准备费用计划 | 0.25d? | 2008-02-01 08:00 | 2008-02-01 10:00 | 38.25d | Project Director | 2h | key:30 |
| 32 | 1.1.2.4.2 | 建立费用和日程管理的标准和流程 | 0.12d? | 2008-02-01 10:00 | 2008-02-01 11:00 | 38.12d | Project Director | 1h | key:31 |
| 33 | 1.1.2.5 | **质量计划** | 2d? | 2008-01-30 08:00 | 2008-01-31 17:00 | 38.5d |  | 16h | key:32 |
| 34 | 1.1.2.5.1 | 明确质量要求 | 0.5d? | 2008-01-30 08:00 | 2008-01-30 12:00 | 40d | Quality Assurance Manager | 4h | key:33 |
| 35 | 1.1.2.5.2 | 确立质量管理活动的标准和流程 | 0.5d? | 2008-01-30 13:00 | 2008-01-30 17:00 | 39.5d | Quality Assurance Manager | 4h | key:34 |
| 36 | 1.1.2.5.3 | 编写质量管理计划 | 1d? | 2008-01-31 08:00 | 2008-01-31 17:00 | 38.5d | Quality Assurance Manager | 8h | key:35 |
| 37 | 1.1.2.6 | **制订风险计划** | 0.75d? | 2008-02-18 13:00 | 2008-02-19 10:00 | 26.25d |  | 6h | key:36 |
| 38 | 1.1.2.6.1 | 识别风险 | 0.38d? | 2008-02-18 13:00 | 2008-02-18 16:00 | 26.62d | Project Manager | 3h | key:37 |
| 39 | 1.1.2.6.2 | 分析风险 | 0.25d? | 2008-02-18 16:00 | 2008-02-19 09:00 | 26.38d | Project Manager | 2h | key:38 |
| 40 | 1.1.2.6.3 | 记录风险 | 0.12d? | 2008-02-19 09:00 | 2008-02-19 10:00 | 26.25d | Project Manager | 1h | key:39 |
| 41 | 1.1.2.7 | **组织项目资源** | 4d? | 2008-01-30 08:00 | 2008-02-04 17:00 | 36.5d |  | 16h | key:40 |
| 42 | 1.1.2.7.1 | 确立组织结构 | 0.12d? | 2008-02-01 11:00 | 2008-02-01 12:00 | 38d | Project Director | 1h | key:41 |
| 43 | 1.1.2.7.2 | 确立人员计划 | 0.25d? | 2008-02-01 13:00 | 2008-02-01 15:00 | 37.75d | Project Director | 2h | key:42 |
| 44 | 1.1.2.7.3 | 获取资源 | 0.25d? | 2008-02-01 15:00 | 2008-02-01 17:00 | 37.5d | Project Director | 2h | key:43 |
| 45 | 1.1.2.7.4 | 团队磨合 | 1d? | 2008-02-04 08:00 | 2008-02-04 17:00 | 36.5d | Project Director | 8h | key:44 |
| 46 | 1.1.2.7.5 | 确立团队效能的标准和流程 | 0.38d? | 2008-01-30 08:00 | 2008-01-30 11:00 | 40.12d | Team Leader | 3h | key:45 |
| 47 | 1.1.2.8 | **制定采购计划** | 0.12d? | 2008-01-30 08:00 | 2008-01-30 09:00 | 40.38d |  | 7h | key:46 |
| 48 | 1.1.2.8.1 | 确定采购需求 | 0.12d? | 2008-01-30 08:00 | 2008-01-30 09:00 | 40.38d | Contracts Manager | 1h | key:47 |
| 49 | 1.1.2.8.2 | 明确各承包商的工作范围 | 0.12d? | 2008-01-30 08:00 | 2008-01-30 09:00 | 40.38d | Contracts Manager | 1h | key:48 |
| 50 | 1.1.2.8.3 | 识别潜在的承包商 | 0.12d? | 2008-01-30 08:00 | 2008-01-30 09:00 | 40.38d | Contracts Manager | 1h | key:49 |
| 51 | 1.1.2.8.4 | 明确承包方式 | 0.12d? | 2008-01-30 08:00 | 2008-01-30 09:00 | 40.38d | Contracts Manager | 1h | key:50 |
| 52 | 1.1.2.8.5 | 编写承包商管理计划 | 0.12d? | 2008-01-30 08:00 | 2008-01-30 09:00 | 40.38d | Contracts Manager | 1h | key:51 |
| 53 | 1.1.2.8.6 | 签订合同，明确相关管理标准 | 0.12d? | 2008-01-30 08:00 | 2008-01-30 09:00 | 40.38d | Contracts Manager | 1h |  |
| 54 | 1.1.2.8.7 | 评审供应商流程及审计产出物 | 0.12d? | 2008-01-30 08:00 | 2008-01-30 09:00 | 40.38d | Contracts Manager | 1h |  |

Notes:
- 30: Document the expected cash flow as the basis for monitoring the monthly financial performance of the project.
- 31: Translate the estimates and schedule into an expected monthly cash flow as the basis for monitoring the project's financial performance.
- 32: Define and document the specific standards and procedures for monitoring and controlling the project costs, schedule, and performance.
- 33: Prepare the way for a quality project.
- 34: Define the expectations for quality, the internal process and product attributes that indicate whether the quality factors are being achieved, and the measures to be used to give visibility to the levels of quality being achieved.
- 35: Define and document the specific standards and procedures for quality management activities.
- 36: Establish the baseline against which project quality will be measured and describe the methods and procedures to be used for monitoring and verifying project quality.
- 37: Identify, analyze and profile project risks,
- 38: Risk identification identifies the risks which if unmanaged could impact the project.
- 39: Qualitative and Quantitative Analysis of a project's risks and impacts. The result is a prioritized list of risks.
- 40: Profile the potential risks to the project by producing specific plans to reduce or eliminate high risk items before they become obstacles to successful project delivery.
- 41: Identify and mobilize a productive and motivated project team.
- 42: Create an effective and efficient project organization structure.
- 43: Identify the skills required for each role within the project structure, the person-day estimates and start and end dates for each role.
- 44: Negotiate for resources and prepare action plans to identify any staffing deficiencies.
- 45: Provide a formal orientation to the project and build a common understanding within the team.
- 46: Define and document the specific standards and procedures for the general conduct of the project team.
- 47: To understand and document what needs to be purchased/contracted for the project and how the purchasing/contracting is to be done.
- 48: To understand which project components will be delivered with in-house resources and which will have to be procured from outside vendors/suppliers
- 49: Define the scope of work to be accomplished by each project subcontractor.
- 50: To develop and qualify a shortlist of potential subcontractors for the project.
- 51: Identify the appropriate type of contract to be used for each identified procurement requirement.
- 52: Describe the methods and procedures to be used in subcontracting work.
- 53: Establish Service Level Agreements and Supplier Agreement Management plans for each supplier. SLA consists commercial terms and conditions whereas SAMP consists project management related activities.
- 54: Project Manager plans various reviews related to Supplier's configuration management process, project management processes etc. He also identifies work products that are required to be audited to provide proactive feedback to the supplier

| ID | WBS | Task | Type | Duration | Start | Finish | Total slack | Resources | Work | Text8 |
| --- | --- | --- | --- | --- | --- | --- | --- | --- | --- | --- |
| 55 | 1.1.2.9 | **建立项目环境** |  | 15.75d? | 2008-02-01 08:00 | 2008-02-22 15:00 | 22.75d |  | 36h | key:52 |
| 56 | 1.1.2.9.1 | 准备项目需要用到的工具、设备 |  | 1d? | 2008-02-19 10:00 | 2008-02-20 10:00 | 25.25d | Project Manager | 8h | key:53 |
| 57 | 1.1.2.9.2 | 建立项目标准与流程 |  | 1d? | 2008-02-01 08:00 | 2008-02-01 17:00 | 37.5d | Quality Assurance Manager | 8h | key:54 |
| 58 | 1.1.2.9.3 | 设置项目管理环境 |  | 0.5d? | 2008-02-20 10:00 | 2008-02-20 15:00 | 24.75d | Project Manager | 4h | key:55 |
| 59 | 1.1.2.9.4 | 设置项目手册 |  | 1d? | 2008-02-20 15:00 | 2008-02-21 15:00 | 23.75d | Project Manager | 8h | key:56 |
| 60 | 1.1.2.9.5 | 编写项目管理计划 |  | 1d? | 2008-02-21 15:00 | 2008-02-22 15:00 | 22.75d | Project Manager | 8h | key:57 |
| 61 | 1.1.3 | **需求阶段、系统和验收测试计划** |  | 21.25d? | 2008-01-30 08:00 | 2008-02-28 10:00 | 19.25d |  | 346h |  |
| 62 | 1.1.3.1 | **需求工程** |  | 21.25d? | 2008-01-30 08:00 | 2008-02-28 10:00 | 19.25d |  | 278h | key:66 |
| 63 | 1.1.3.1.1 | 诱导需求 |  | 15d? | 2008-01-30 08:00 | 2008-02-19 17:00 | 25.5d | 需求分析师 | 120h |  |
| 64 | 1.1.3.1.2 | 需求分析 |  | 3.75d? | 2008-02-20 08:00 | 2008-02-25 15:00 | 21.75d | 需求分析师 | 30h |  |
| 65 | 1.1.3.1.3 | 原型制作 |  | 2.5d? | 2008-02-25 15:00 | 2008-02-28 10:00 | 19.25d | 需求分析师 | 20h |  |
| 66 | 1.1.3.1.4 | 编写需求说明书 (SRS) |  | 7.5d? | 2008-01-30 08:00 | 2008-02-08 12:00 | 33d | Application Architect | 60h | key:68 |
| 67 | 1.1.3.1.5 | 更新需求跟踪矩阵(RTM) |  | 1d? | 2008-02-08 13:00 | 2008-02-11 12:00 | 32d | Application Architect | 8h |  |
| 68 | 1.1.3.1.6 | 评审 SRS & RTM |  | 1d? | 2008-01-30 08:00 | 2008-01-30 17:00 | 39.5d | Reviewer | 8h | key:69 |
| 69 | 1.1.3.1.7 | 修改SRS |  | 1.25d? | 2008-02-11 13:00 | 2008-02-12 15:00 | 30.75d | Application Architect | 10h | key:70 |
| 70 | 1.1.3.1.8 | 验证对SRS的修改 |  | 0.5d? | 2008-01-31 08:00 | 2008-01-31 12:00 | 39d | Reviewer | 4h | key:71 |
| 71 | 1.1.3.1.9 | 签名确认SRS |  | 0.25d? | 2008-01-30 08:00 | 2008-01-30 10:00 | 40.25d | Acceptor | 2h |  |
| 72 | 1.1.3.1.10 | 基线化 SRS |  | 1d? | 2008-02-12 15:00 | 2008-02-13 15:00 | 29.75d | Application Architect | 8h | key:73 |
| 73 | 1.1.3.1.11 | 确定需求的优先级 |  | 1d? | 2008-02-22 15:00 | 2008-02-25 15:00 | 21.75d | Project Manager | 8h |  |
| 74 | 1.1.3.2 | **用户验收测试计划** |  | 2.5d? | 2008-01-30 08:00 | 2008-02-01 12:00 | 38d |  | 32h |  |
| 75 | 1.1.3.2.1 | 准备UAT测试计划和测试用例 |  | 2.5d? | 2008-01-30 08:00 | 2008-02-01 12:00 | 38d | Technical Architect | 20h |  |
| 76 | 1.1.3.2.2 | 评审UAT测试计划和测试用例 |  | 1d? | 2008-01-31 13:00 | 2008-02-01 12:00 | 38d | Reviewer | 8h |  |
| 77 | 1.1.3.2.3 | 基线化UAT测试计划和测试用例 |  | 0.5d? | 2008-01-30 11:00 | 2008-01-30 16:00 | 39.62d | Team Leader | 4h |  |
| 78 | 1.1.3.3 | **系统测试计划** |  | 4.62d? | 2008-01-30 16:00 | 2008-02-06 12:00 | 35d |  | 36h |  |
| 79 | 1.1.3.3.1 | 准备系统测试计划 (STP) |  | 0.5d? | 2008-02-01 13:00 | 2008-02-01 17:00 | 37.5d | Technical Architect | 4h |  |
| 80 | 1.1.3.3.2 | 准备系统测试用例 (STC) |  | 2.5d? | 2008-02-04 08:00 | 2008-02-06 12:00 | 35d | Technical Architect | 20h |  |
| 81 | 1.1.3.3.3 | 评审 STP 和 STC |  | 1d? | 2008-02-01 13:00 | 2008-02-04 12:00 | 37d | Reviewer | 8h |  |
| 82 | 1.1.3.3.4 | 基线化STP 和 STC |  | 0.5d | 2008-01-30 16:00 | 2008-01-31 11:00 | 39.12d | Team Leader | 4h |  |
| 83 | 1.1.4 | 需求调研结束 | milestone | 1d? | 2008-01-30 08:00 | 2008-01-30 17:00 | 39.5d |  |  |  |

Notes:
- 55: Ensure that the fundamental project delivery infrastructure is in place (e.g., work space, standards and procedures, project tools).
- 56: Obtain and furnish work space with the appropriate facilities.
- 57: Define and document the specific standards and procedures to be applied on the project to ensure consistent delivery in accordance with the quality requirements.
- 58: Implement the project management tools to be used by the project team to manage performance.
- 59: Collect and store the project's quality and scope control records in a standard, single location to provide familiar, rapid access to key project management information.
- 60: Establish the baseline for scope, budget, schedule, and quality, against which project performance is measured and all changes to the project are controlled.
- 62: Define the system requirements.
- 66: Use standard template and prepare a detailed Software Requirements Specifications Document
- 67: Use Standard format for Requirements Traceability Matrix and trace requirements from one phase to other phase. It includes both horizontal traceability and vertical traceability
- 68: Conduct a forma review for SRS
- 69: Fix the defect identified in SRS review and incorporate other suggestions
- 70: Reviewers will verify re-work on SRS
- 71: Obtain sign-off from relevant stakeholders
- 72: Baseline SRS document for subsequent work
- 73: Requirements to be prioritized so that some of the requirements at high risk can be considered for prototyping.
- 74: Acceptance Test Plans which will be executed at Customer Site.
- 75: Use standard template for Acceptance test plan.
- 76: Reviw Acceptance Test plan like any other artifact and record reveiw comments in reveiw log.
- 77: Baseline acceptance plan along with acceptance test cases.
- 78: System Test Planning Activities generally start with preparation of SRS in V-model
- 79: Prepare system test plan with system test environment and entry and exit criteria etc
- 80: Prepare various system test cases
- 81: Conduct a formal review on both system test plan and system test cases
- 82: Baseline STP and STC and maintain under version control

| ID | WBS | Task | Duration | Start | Finish | Total slack | Resources | Work | Text8 |
| --- | --- | --- | --- | --- | --- | --- | --- | --- | --- |
| 84 | 1.1.5 | **概要设计、集成测试计划与技术攻关** | 16d? | 2008-01-30 08:00 | 2008-02-20 17:00 | 24.5d |  | 159h |  |
| 85 | 1.1.5.1 | **技术攻关** | 1.5d? | 2008-02-06 13:00 | 2008-02-07 17:00 | 33.5d |  | 12h |  |
| 86 | 1.1.5.1.1 | 列举需用到的新技术 | 0.25d? | 2008-02-06 13:00 | 2008-02-06 15:00 | 34.75d | Technical Architect | 2h |  |
| 87 | 1.1.5.1.2 | 进行技术攻关 | 1.25d? | 2008-02-06 15:00 | 2008-02-07 17:00 | 33.5d | Technical Architect | 10h |  |
| 88 | 1.1.5.2 | **概要设计(HLD)** | 12.75d? | 2008-01-30 10:00 | 2008-02-15 17:00 | 27.5d |  | 66h |  |
| 89 | 1.1.5.2.1 | 识别多个可选方案 | 2.5d? | 2008-02-08 08:00 | 2008-02-12 12:00 | 31d | Technical Architect | 20h |  |
| 90 | 1.1.5.2.2 | 评估和选择设计方案 | 1d? | 2008-02-12 13:00 | 2008-02-13 12:00 | 30d | Technical Architect | 8h |  |
| 91 | 1.1.5.2.3 | 准备概要设计文档(HLD) | 1d? | 2008-02-13 13:00 | 2008-02-14 12:00 | 29d | Technical Architect | 8h |  |
| 92 | 1.1.5.2.4 | 更新需求跟踪矩阵 (RTM) | 0.5d? | 2008-02-14 13:00 | 2008-02-14 17:00 | 28.5d | Technical Architect | 4h |  |
| 93 | 1.1.5.2.5 | 评审 HLD & RTM | 1d? | 2008-02-04 13:00 | 2008-02-05 12:00 | 36d | Reviewer | 8h |  |
| 94 | 1.1.5.2.6 | 修改HLD | 1d? | 2008-02-15 08:00 | 2008-02-15 17:00 | 27.5d | Technical Architect | 8h |  |
| 95 | 1.1.5.2.7 | 验证修改 | 0.5d? | 2008-02-05 13:00 | 2008-02-05 17:00 | 35.5d | Reviewer | 4h | key:79 |
| 96 | 1.1.5.2.8 | 签名确认 HLD | 0.25d? | 2008-01-30 10:00 | 2008-01-30 12:00 | 40d | Acceptor | 2h |  |
| 97 | 1.1.5.2.9 | 基线化HLD | 0.5d? | 2008-01-31 11:00 | 2008-01-31 16:00 | 38.62d | Team Leader | 4h |  |
| 98 | 1.1.5.3 | **测试计划整合** | 14.12d? | 2008-01-31 16:00 | 2008-02-20 17:00 | 24.5d |  | 48h |  |
| 99 | 1.1.5.3.1 | 确定整合顺序 | 1d? | 2008-02-18 08:00 | 2008-02-18 17:00 | 26.5d | Technical Architect | 8h |  |
| 100 | 1.1.5.3.2 | 制定整合后的测试计划(ITP)和测试用例(ITC) | 1d? | 2008-02-19 08:00 | 2008-02-19 17:00 | 25.5d | Technical Architect | 8h |  |
| 101 | 1.1.5.3.3 | 评审 ITP 和 ITC | 1d? | 2008-02-06 08:00 | 2008-02-06 17:00 | 34.5d | Reviewer | 8h |  |
| 102 | 1.1.5.3.4 | 修订 ITP and ITC | 1d? | 2008-02-20 08:00 | 2008-02-20 17:00 | 24.5d | Technical Architect | 8h |  |
| 103 | 1.1.5.3.5 | 验证修改 | 1d? | 2008-02-07 08:00 | 2008-02-07 17:00 | 33.5d | Reviewer | 8h |  |
| 104 | 1.1.5.3.6 | 基线化ITP和ITC | 1d? | 2008-01-31 16:00 | 2008-02-01 16:00 | 37.62d | Team Leader | 8h |  |
| 105 | 1.1.5.4 | **开发用户帮助材料** | 10.38d? | 2008-02-01 16:00 | 2008-02-18 10:00 | 27.25d |  | 21h | key:115 |
| 106 | 1.1.5.4.1 | 制定用户帮助材料编写计划 | 0.12d? | 2008-02-01 16:00 | 2008-02-01 17:00 | 37.5d | Team Leader | 1h |  |
| 107 | 1.1.5.4.2 | 编制用户帮助材料 | 2.5d? | 2008-02-13 15:00 | 2008-02-18 10:00 | 27.25d | Application Architect | 20h | key:116 |

Notes:
- 88: The output of this activity is to prepare a detailed HLD Document
- 89: Identify various possible design solutions to meet the requirements
- 90: Evaluate alternate design solutions. If possible apply Decision Analysis and Resolution technique for this purpose. Use Pugh matrix
- 91: Use standard template for preparation of HLD
- 92: Use Standard format for Requirements Traceability Matrix and trace requirements from one phase to other phase. It includes both horizontal traceability and vertical traceability
- 93: Conduct a formal review on HLD and obtain defects and suggestions from peers
- 94: Fix the defects and incorporate suggestions
- 95: The reviewer needs to verify the rework done by the author
- 96: Obtain sign-off on HLD from relevant stakeholders
- 97: Baseline HLD and maintain under version control
- 98: Generally Integrated test planning activities start with HLD
- 99: Identify various integration Sequences and establish best feasible sequence
- 100: Prepare Integrated Test plan with integration sequence, how to manage interfaces etc. Use standard template for this purpose.
- 101: Conduct a formal review on ITP and ITC
- 102: Close review defects and suggestions
- 103: Reviewer has to verify rework done by the author
- 104: Baseline integrated test plan and maintain under version control
- 105: Define the format and contents of the user aids.
- 106: Use standard template for user documentation plan
- 107: Define the purpose, contents, format, and description for each user aid.

| ID | WBS | Task | Type | Duration | Start | Finish | Total slack | Resources | Work | Text8 |
| --- | --- | --- | --- | --- | --- | --- | --- | --- | --- | --- |
| 108 | 1.1.5.5 | **培训设计** |  | 1.5d? | 2008-01-30 08:00 | 2008-01-31 12:00 | 39d |  | 12h | key:117 |
| 109 | 1.1.5.5.1 | 制定培训计划 |  | 0.5d? | 2008-01-30 08:00 | 2008-01-30 12:00 | 40d | Trainer | 4h | key:118 |
| 110 | 1.1.5.5.2 | 制定课程设计的标准及指引 |  | 0.5d? | 2008-01-30 13:00 | 2008-01-30 17:00 | 39.5d | Trainer | 4h | key:119 |
| 111 | 1.1.5.5.3 | 培训课程准备及展示 |  | 0.5d? | 2008-01-31 08:00 | 2008-01-31 12:00 | 39d | Trainer | 4h | key:120 |
| 112 | 1.1.6 | **详细设计、单元测试计划** |  | 21.25d? | 2008-01-30 08:00 | 2008-02-28 10:00 | 19.25d |  | 122h |  |
| 113 | 1.1.6.1 | **详细设计（LLD）** |  | 20.75d? | 2008-01-30 13:00 | 2008-02-28 10:00 | 19.25d |  | 78h | key:89 |
| 114 | 1.1.6.1.1 | 数据模型设计 |  | 2d? | 2008-02-18 10:00 | 2008-02-20 10:00 | 25.25d | Application Architect | 16h | key:90 |
| 115 | 1.1.6.1.2 | 功能组件设计 |  | 2d? | 2008-02-20 10:00 | 2008-02-22 10:00 | 23.25d | Application Architect | 16h | key:91 |
| 116 | 1.1.6.1.3 | 设计用户接口 |  | 1d? | 2008-02-22 10:00 | 2008-02-25 10:00 | 22.25d | Application Architect | 8h | key:92 |
| 117 | 1.1.6.1.4 | 编写LLD文档 |  | 2d? | 2008-02-25 10:00 | 2008-02-27 10:00 | 20.25d | Application Architect | 16h |  |
| 118 | 1.1.6.1.5 | 更新需求跟踪矩阵(RTM) |  | 0.5d? | 2008-02-27 10:00 | 2008-02-27 15:00 | 19.75d | Application Architect | 4h |  |
| 119 | 1.1.6.1.6 | 评审LLD 和RTM |  | 1d? | 2008-02-08 08:00 | 2008-02-08 17:00 | 32.5d | Reviewer | 8h |  |
| 120 | 1.1.6.1.7 | 修改LLD and RTM |  | 0.5d? | 2008-02-27 15:00 | 2008-02-28 10:00 | 19.25d | Application Architect | 4h |  |
| 121 | 1.1.6.1.8 | 验证修改 |  | 0.25d? | 2008-02-11 08:00 | 2008-02-11 10:00 | 32.25d | Reviewer | 2h |  |
| 122 | 1.1.6.1.9 | 签名确认 LLD |  | 0.25d? | 2008-01-30 13:00 | 2008-01-30 15:00 | 39.75d | Acceptor | 2h |  |
| 123 | 1.1.6.1.10 | 基线化 LLD |  | 0.25d? | 2008-02-04 08:00 | 2008-02-04 10:00 | 37.25d | Team Leader | 2h |  |
| 124 | 1.1.6.2 | **软件集成计划** |  | 17d? | 2008-01-30 08:00 | 2008-02-21 17:00 | 23.5d |  | 13h | key:78 |
| 125 | 1.1.6.2.1 | 识别接口 |  | 0.25d? | 2008-02-21 08:00 | 2008-02-21 10:00 | 24.25d | Technical Architect | 2h |  |
| 126 | 1.1.6.2.2 | 准备软件集成计划 |  | 0.5d? | 2008-02-21 10:00 | 2008-02-21 15:00 | 23.75d | Technical Architect | 4h |  |
| 127 | 1.1.6.2.3 | 评审软件集成计划 |  | 0.5d? | 2008-01-30 08:00 | 2008-01-30 12:00 | 40d | Reviewers | 4h |  |
| 128 | 1.1.6.2.4 | 修改软件集成计划 |  | 0.12d? | 2008-02-21 15:00 | 2008-02-21 16:00 | 23.62d | Technical Architect | 1h |  |
| 129 | 1.1.6.2.5 | 验证修改 |  | 0.12d? | 2008-01-30 08:00 | 2008-01-30 09:00 | 40.38d | Reviewers | 1h |  |
| 130 | 1.1.6.2.6 | 基线化软件集成计划 |  | 0.12d? | 2008-02-21 16:00 | 2008-02-21 17:00 | 23.5d | Technical Architect | 1h |  |
| 131 | 1.1.6.3 | **单元测试计划** |  | 16.25d? | 2008-02-04 10:00 | 2008-02-26 12:00 | 21d |  | 31h |  |
| 132 | 1.1.6.3.1 | 准备单元测试计划和单元测试用例 |  | 2d? | 2008-02-22 08:00 | 2008-02-25 17:00 | 21.5d | Technical Architect | 16h |  |
| 133 | 1.1.6.3.2 | 评审单元测试计划和单元测试用例 |  | 1d? | 2008-02-11 10:00 | 2008-02-12 10:00 | 31.25d | Reviewer | 8h |  |
| 134 | 1.1.6.3.3 | 修订单元测试计划和单元测试用例 |  | 0.5d? | 2008-02-26 08:00 | 2008-02-26 12:00 | 21d | Technical Architect | 4h |  |
| 135 | 1.1.6.3.4 | 验证修改 |  | 0.25d? | 2008-02-12 10:00 | 2008-02-12 12:00 | 31d | Reviewer | 2h |  |
| 136 | 1.1.6.3.5 | 基线化 |  | 0.12d? | 2008-02-04 10:00 | 2008-02-04 11:00 | 37.12d | Team Leader | 1h |  |
| 137 | 1.1.7 | 设计结束 | milestone | 1d? | 2008-01-30 08:00 | 2008-01-30 17:00 | 39.5d |  |  |  |

Notes:
- 108: Design a training plan to prepare all impacted staff for the new system.
- 109: Develop a Training Plan to train all impacted staff, covering the approach, participants, and roles and responsibilities.
- 110: Develop standards and guidelines for the design of the contents of the training materials.
- 111: Prepare the deliverable for presentation and present it to the Acceptor.
- 113: The output of this phase is to prepare a detailed low level design document
- 114: Develop detailed data design which is an important input for LLD
- 115: Refine the entities and relationships, and define the attributes and business rules (such as cardinality, optionality, edit rules, and deviation rules) that are to be used by the system.
- 116: Consider GUI guidelines and ergonomic standards while design GUI part
- 117: Use standard template for low level design document
- 118: Use Standard format for Requirements Traceability Matrix and trace requirements from one phase to other phase. It includes both horizontal traceability and vertical traceability
- 119: Conduct a formal review on Low Level Design Document
- 120: Close review defects and incorpore review suggestions
- 121: Reviewer has to verify rework done by the author for completeness
- 122: Obtain sign-off from all relevant stakeholders
- 123: Baseline Low Level Design Document and maintain under version control
- 124: This is the second phase in Waterfall model.
- 125: Identify various possible design solutions to meet the requirements
- 126: Evaluate alternate design solutions. If possible apply Decision Analysis and Resolution technique for this purpose. Use Pugh matrix
- 127: Use standard template for preparation of HLD
- 128: Use Standard format for Requirements Traceability Matrix and trace requirements from one phase to other phase. It includes both horizontal traceability and vertical traceability
- 129: Conduct a formal review on HLD and obtain defects and suggestions from peers
- 130: Fix the defects and incorporate suggestions
- 131: This is a concurrent activity along with Low Level Design
- 132: Use Standard template for unit test plan and test cases
- 133: Conduct a formal review on Unit Test Plan and Test Cases
- 134: Close review defects and incorporate review suggestions
- 135: Author has to verify rework done by the author for completeness
- 136: Unit test Plan to be baseline and maintained under version control

| ID | WBS | Task | Type | Duration | Start | Finish | Total slack | Resources | Work |
| --- | --- | --- | --- | --- | --- | --- | --- | --- | --- |
| 138 | 1.1.8 | **实现** |  | 13.5d? | 2008-01-30 08:00 | 2008-02-18 12:00 | 27d |  | 96h |
| 139 | 1.1.8.1 | **编码--模块1** |  | 10.5d? | 2008-01-30 08:00 | 2008-02-13 12:00 | 30d |  | 16h |
| 140 | 1.1.8.1.1 | 模块1编码 |  | 1d? | 2008-01-30 08:00 | 2008-01-30 17:00 | 39.5d | Developer | 8h |
| 141 | 1.1.8.1.2 | 代码评审 |  | 1d? | 2008-02-12 13:00 | 2008-02-13 12:00 | 30d | Reviewer | 8h |
| 142 | 1.1.8.2 | **单元测试- 模块1** |  | 2d? | 2008-01-31 08:00 | 2008-02-01 17:00 | 37.5d |  | 16h |
| 143 | 1.1.8.2.1 | 执行单元测试 |  | 1d? | 2008-01-31 08:00 | 2008-01-31 17:00 | 38.5d | Developer | 8h |
| 144 | 1.1.8.2.2 | 记录测试结果 |  | 1d? | 2008-02-01 08:00 | 2008-02-01 17:00 | 37.5d | Developer | 8h |
| 145 | 1.1.8.3 | 修改模块1 |  | 1d? | 2008-02-04 08:00 | 2008-02-04 17:00 | 36.5d | Developer | 8h |
| 146 | 1.1.8.4 | 验证修改 |  | 1d? | 2008-02-13 13:00 | 2008-02-14 12:00 | 29d | Reviewer | 8h |
| 147 | 1.1.8.5 | **编码--模块 <n>** |  | 8.5d? | 2008-02-05 08:00 | 2008-02-15 12:00 | 28d |  | 16h |
| 148 | 1.1.8.5.1 | 模块n编码 |  | 1d? | 2008-02-05 08:00 | 2008-02-05 17:00 | 35.5d | Developer | 8h |
| 149 | 1.1.8.5.2 | 代码评审 |  | 1d? | 2008-02-14 13:00 | 2008-02-15 12:00 | 28d | Reviewer | 8h |
| 150 | 1.1.8.6 | **单元测试- 模块<n>** |  | 2d? | 2008-02-06 08:00 | 2008-02-07 17:00 | 33.5d |  | 16h |
| 151 | 1.1.8.6.1 | 执行单元测试 |  | 1d? | 2008-02-06 08:00 | 2008-02-06 17:00 | 34.5d | Developer | 8h |
| 152 | 1.1.8.6.2 | 记录测试结果 |  | 1d? | 2008-02-07 08:00 | 2008-02-07 17:00 | 33.5d | Developer | 8h |
| 153 | 1.1.8.7 | 修改模块n |  | 1d? | 2008-02-08 08:00 | 2008-02-08 17:00 | 32.5d | Developer | 8h |
| 154 | 1.1.8.8 | 验证修改 |  | 1d? | 2008-02-15 13:00 | 2008-02-18 12:00 | 27d | Reviewer | 8h |
| 155 | 2.5 | **集成测试** |  | 9d? | 2008-01-30 08:00 | 2008-02-11 17:00 | 31.5d |  | 40h |
| 156 | 1.1.9.1 | 模块集成 |  | 1d? | 2008-01-30 08:00 | 2008-01-30 17:00 | 39.5d | Tester | 8h |
| 157 | 1.1.9.2 | 建立集成测试环境 |  | 1d? | 2008-01-31 08:00 | 2008-01-31 17:00 | 38.5d | Tester | 8h |
| 158 | 1.1.9.3 | 进行集成测试 |  | 1d? | 2008-02-01 08:00 | 2008-02-01 17:00 | 37.5d | Tester | 8h |
| 159 | 1.1.9.4 | 修改缺陷 |  | 1d? | 2008-02-11 08:00 | 2008-02-11 17:00 | 31.5d | Developer | 8h |
| 160 | 1.1.9.5 | 验证修改 |  | 1d? | 2008-02-04 08:00 | 2008-02-04 17:00 | 36.5d | Tester | 8h |
| 161 | 1.1.10 | **系统测试** |  | 6d? | 2008-02-05 08:00 | 2008-02-12 17:00 | 30.5d |  | 40h |
| 162 | 1.1.10.1 | 建立系统测试环境 |  | 1d? | 2008-02-05 08:00 | 2008-02-05 17:00 | 35.5d | Tester | 8h |
| 163 | 1.1.10.2 | 进行系统测试 |  | 1d? | 2008-02-06 08:00 | 2008-02-06 17:00 | 34.5d | Tester | 8h |
| 164 | 1.1.10.3 | 修改缺陷 |  | 1d? | 2008-02-12 08:00 | 2008-02-12 17:00 | 30.5d | Developer | 8h |
| 165 | 1.1.10.4 | 验证修改 |  | 1d? | 2008-02-07 08:00 | 2008-02-07 17:00 | 33.5d | Tester | 8h |
| 166 | 1.1.10.5 | 跟新RTM |  | 1d? | 2008-02-08 08:00 | 2008-02-08 17:00 | 32.5d | Tester | 8h |
| 167 | 1.1.11 | 代码编写及测试结束 | milestone | 1d? | 2008-01-30 08:00 | 2008-01-30 17:00 | 39.5d |  |  |

Notes:
- 140: Develop detailed programs by using designs and other standards
- 141: Identify peers and conduct code reviews by using standard checklists and other standards
- 145: Fix code review defects and other best practices suggested by the peers / reviewers
- 146: Reviewer has to verify rework done by the author for completeness
- 148: Develop detailed programs by using designs and other standards
- 149: Identify peers and conduct code reviews by using standard checklists and other standards
- 153: Fix code review defects and other best practices suggested by the peers / reviewers
- 154: Reviewer has to verify rework done by the author for completeness
- 156: As per integration sequence and strategy, integrate various modules
- 157: Test environment includes hardware, software, communication etc
- 158: Conduct integration testing as per Integration test plan and test cases prepared for this purpose
- 159: Fix integration testing defects
- 160: Repeat next level of test cycle
- 162: Test environment includes hardware, software, communication etc
- 163: Conduct system testing as per the System Test Plan and Test Cases designed for this purpose
- 164: Fix System testing defects
- 165: Repeat next level of test cycle
- 166: Use Standard format for Requirements Traceability Matrix and trace requirements from one phase to other phase. It includes both horizontal traceability and vertical traceability

| ID | WBS | Task | Type | Duration | Start | Finish | Total slack | Resources | Work | Text8 |
| --- | --- | --- | --- | --- | --- | --- | --- | --- | --- | --- |
| 168 | 1.1.12 | **发布** |  | 2d? | 2008-02-04 11:00 | 2008-02-06 11:00 | 35.12d |  | 16h |  |
| 169 | 1.1.12.1 | 编写 Release Notes |  | 1d? | 2008-02-04 11:00 | 2008-02-05 11:00 | 36.12d | Team Leader | 8h |  |
| 170 | 1.1.12.2 | 程序发布 |  | 1d? | 2008-02-05 11:00 | 2008-02-06 11:00 | 35.12d | Team Leader | 8h |  |
| 171 | 1.1.13 | **用户验证测试** |  | 14d? | 2008-01-30 08:00 | 2008-02-18 17:00 | 26.5d |  | 48h |  |
| 172 | 1.1.13.1 | **安装应用软件** |  | 1d? | 2008-02-13 08:00 | 2008-02-13 17:00 | 29.5d |  | 8h | key:186 |
| 173 | 1.1.13.1.1 | 客户方试验环境软件安装 |  | 1d? | 2008-02-13 08:00 | 2008-02-13 17:00 | 29.5d | Developer | 8h | key:187 |
| 174 | 1.1.13.2 | **客户现场测试** |  | 14d? | 2008-01-30 08:00 | 2008-02-18 17:00 | 26.5d |  | 40h | key:188 |
| 175 | 1.1.13.2.1 | 提供测试支持 |  | 1d? | 2008-01-30 08:00 | 2008-01-30 17:00 | 39.5d | Facilities Engineer | 8h | key:189 |
| 176 | 1.1.13.2.2 | 获得测试结果 |  | 1d? | 2008-01-30 15:00 | 2008-01-31 15:00 | 38.75d | Acceptor | 8h |  |
| 177 | 1.1.13.2.3 | 修改并关闭缺陷 |  | 1d? | 2008-02-14 08:00 | 2008-02-14 17:00 | 28.5d | Developer | 8h |  |
| 178 | 1.1.13.2.4 | 客户培训 |  | 2d? | 2008-02-15 08:00 | 2008-02-18 17:00 | 26.5d | Developer | 16h |  |
| 179 | 1.1.14 | 可以上线 | milestone | 1d? | 2008-01-30 08:00 | 2008-01-30 17:00 | 39.5d |  |  |  |
| 180 | 1.1.15 | **试运行** |  | 4d? | 2008-02-19 08:00 | 2008-02-22 17:00 | 22.5d |  | 32h |  |
| 181 | 1.1.15.1 | 生产环境部署（上线） |  | 1d? | 2008-02-19 08:00 | 2008-02-19 17:00 | 25.5d | Developer | 8h |  |
| 182 | 1.1.15.2 | 试运行 | milestone | 3d? | 2008-02-20 08:00 | 2008-02-22 17:00 | 22.5d | Developer | 24h |  |
| 183 | 1.1.16 | **结项** |  | 24.38d? | 2008-01-30 11:00 | 2008-03-04 15:00 | 15.75d |  | 56h |  |
| 184 | 1.1.16.1 | 管理项目验收事项 |  | 1d? | 2008-02-25 15:00 | 2008-02-26 15:00 | 20.75d | Project Manager | 8h | key:254 |
| 185 | 1.1.16.2 | 评估客户满意度 |  | 1d? | 2008-02-26 15:00 | 2008-02-27 15:00 | 19.75d | Project Manager | 8h | key:255 |
| 186 | 1.1.16.3 | 总结项目经验教训 |  | 1d? | 2008-02-27 15:00 | 2008-02-28 15:00 | 18.75d | Project Manager | 8h | key:256 |
| 187 | 1.1.16.4 | 评审和确认项目成员效能 |  | 1d? | 2008-02-28 15:00 | 2008-02-29 15:00 | 17.75d | Project Manager | 8h | key:257 |
| 188 | 1.1.16.5 | 评审分析项目费用情况 |  | 1d? | 2008-02-29 15:00 | 2008-03-03 15:00 | 16.75d | Project Manager | 8h | key:258 |
| 189 | 1.1.16.6 | 项目总结会议 |  | 1d? | 2008-01-30 11:00 | 2008-01-31 11:00 | 39.12d | Project Team | 8h |  |
| 190 | 1.1.16.7 | 项目资料移交 |  | 1d? | 2008-03-03 15:00 | 2008-03-04 15:00 | 15.75d | Project Manager | 8h | key:259 |
| 191 | 1.1.17 | **维护** |  | 22.5d? | 2008-02-25 08:00 | 2008-03-26 12:00 | 0d |  | 180h |  |
| 192 | 1.1.17.1 | 现场维护 |  | 7.5d? | 2008-02-25 08:00 | 2008-03-05 12:00 | 15d | Developer | 60h |  |
| 193 | 1.1.17.2 | 远程维护 |  | 15d? | 2008-03-05 13:00 | 2008-03-26 12:00 | 0d | Developer | 120h |  |

Notes:
- 169: Prepare a release note which consists work products to be delivered, configuration management issues etc. Use standard template for the same.
- 170: Release all program units pertaining to this stage as per Release note
- 172: Install the application software in the site environment.
- 173: Install the application software components.
- 174: Generally acceptance testing is conducted at customer site
- 175: Provide complete support to the acceptance testing as per the contractual agreement
- 184: Obtain acceptance of deliverables and final sign-off that the project has been completed.
- 185: Document the overall satisfaction with the project.
- 186: Work with the project team to capture relevant experience and lessons learned for the benefit of future projects.
- 187: Complete performance reviews for each team member, recognize efforts and accomplishments, and celebrate success.
- 188: Make sure that all invoices have been delivered and all payments made.
- 190: Update and archive project documentation and make sure that all close out conditions have been met.

| ID | WBS | Task | Duration | Start | Finish | Total slack | Resources | Work | Text8 |
| --- | --- | --- | --- | --- | --- | --- | --- | --- | --- |
| 194 | 1.2 | **项目通用活动** | 37.75d? | 2008-01-30 08:00 | 2008-03-21 15:00 | 2.75d |  | 200h |  |
| 195 | 1.2.1 | **项目管理** | 25.38d? | 2008-02-06 11:00 | 2008-03-12 15:00 | 9.75d |  | 56h |  |
| 196 | 1.2.1.1 | 管理范围和需求 | 1d? | 2008-03-04 15:00 | 2008-03-05 15:00 | 14.75d | Project Manager | 8h | key:231 |
| 197 | 1.2.1.2 | 控制进度 | 1d? | 2008-03-05 15:00 | 2008-03-06 15:00 | 13.75d | Project Manager | 8h | key:236 |
| 198 | 1.2.1.3 | 管理风险 | 1d? | 2008-03-06 15:00 | 2008-03-07 15:00 | 12.75d | Project Manager | 8h | key:239 |
| 199 | 1.2.1.4 | 管理费用 | 1d? | 2008-03-07 15:00 | 2008-03-10 15:00 | 11.75d | Project Manager | 8h | key:241 |
| 200 | 1.2.1.5 | 控制质量 | 1d? | 2008-03-10 15:00 | 2008-03-11 15:00 | 10.75d | Project Manager | 8h | key:245 |
| 201 | 1.2.1.6 | 报告周状态 | 1d? | 2008-02-06 11:00 | 2008-02-07 11:00 | 34.12d | Team Leader | 8h | key:250 |
| 202 | 1.2.1.7 | 报告月状态 | 1d? | 2008-03-11 15:00 | 2008-03-12 15:00 | 9.75d | Project Manager | 8h | key:251 |
| 203 | 1.2.2 | **QA 活动** | 5d? | 2008-02-04 08:00 | 2008-02-08 17:00 | 32.5d |  | 40h |  |
| 204 | 1.2.2.1 | 参与走读和评审 | 1d? | 2008-02-04 08:00 | 2008-02-04 17:00 | 36.5d | Quality Assurance Manager | 8h | key:221 |
| 205 | 1.2.2.2 | 进行检视和审计 | 1d? | 2008-02-05 08:00 | 2008-02-05 17:00 | 35.5d | Quality Assurance Manager | 8h | key:222 |
| 206 | 1.2.2.3 | 参与测试 | 1d? | 2008-02-06 08:00 | 2008-02-06 17:00 | 34.5d | Quality Assurance Manager | 8h | key:223 |
| 207 | 1.2.2.4 | 进行项目评审 | 1d? | 2008-02-07 08:00 | 2008-02-07 17:00 | 33.5d | Quality Assurance Manager | 8h | key:224 |
| 208 | 1.2.2.5 | 检查供应商工作 | 1d? | 2008-02-08 08:00 | 2008-02-08 17:00 | 32.5d | Quality Assurance Manager | 8h | key:225 |
| 209 | 1.2.3 | **CM 活动** | 31.38d? | 2008-02-07 11:00 | 2008-03-21 15:00 | 2.75d |  | 64h |  |
| 210 | 1.2.3.1 | Authorize Work | 1d? | 2008-02-07 11:00 | 2008-02-08 11:00 | 33.12d | Team Leader | 8h | key:200 |
| 211 | 1.2.3.2 | Manage Action Items | 1d? | 2008-03-12 15:00 | 2008-03-13 15:00 | 8.75d | Project Manager | 8h | key:201 |
| 212 | 1.2.3.3 | 管理项目记录 | 1d? | 2008-03-13 15:00 | 2008-03-14 15:00 | 7.75d | Project Manager | 8h | key:202 |
| 213 | 1.2.3.4 | 管理数据项 | 1d? | 2008-03-14 15:00 | 2008-03-17 15:00 | 6.75d | Project Manager | 8h | key:203 |
| 214 | 1.2.3.5 | 管理配置项 | 1d? | 2008-03-17 15:00 | 2008-03-18 15:00 | 5.75d | Project Manager | 8h | key:204 |
| 215 | 1.2.3.6 | 管理过程数据 | 1d? | 2008-03-18 15:00 | 2008-03-19 15:00 | 4.75d | Project Manager | 8h | key:205 |
| 216 | 1.2.3.7 | Provide General Office Support | 1d? | 2008-03-19 15:00 | 2008-03-20 15:00 | 3.75d | Project Manager | 8h | key:206 |
| 217 | 1.2.3.8 | Administer Project Security Processes | 1d? | 2008-03-20 15:00 | 2008-03-21 15:00 | 2.75d | Project Manager | 8h | key:207 |

Notes:
- 196: Maintain a comprehensive, clear, and measurable definition of the project scope and requirements.
- 197: Maintaining the Project Schedule to ensure it remains accurate and current based on approved Change Requests and revised estimates to complete from Project Team Members.
- 198: Managing the Risk Log and acting on Risk Management Action Plans as required to ensure the project stays on schedule.
- 199: Manage the monthly cash flow of the project, including the forecasted estimates to complete for the remainder of the project.
- 200: Implement and manage a program to ensure the project quality and implement continual improvement of work operations.
- 201: Summarize and communicate the accomplishments for the reporting period, the objectives for the coming period, problems (if any), the status of outstanding risk items, and suggestions for dealing with issues and problems.
- 202: Keep project status visible to Project Stakeholders by providing an appropriate summary of project status on a regular monthly basis.
- 204: Participate in structured walk-through and reviews of project deliverables with members of the project team, to represent quality concerns.
- 205: Conduct inspections and audits to determine the completeness and consistency of processes and deliverables.
- 206: Witness testing, conduct verification testing, and conduct acceptance testing of subcontracted components.
- 207: Review and appraise the project to assess and increase the probability of project success.
- 208: Selection and management of any subcontractors required to deliver the project.
- 210: Delegate delivery responsibilities for a work package, establish a clear and unambiguous understanding for how the work package is to be delivered, witness commitment, and formally authorize the commencement of work.
- 211: Record, communicate and ensure closure on all action items including changes to the contractual baseline, requirements for information, problem reports and service requests, to facilitate effective decision-making within acceptable time frames.
- 212: Establish, maintain, and dispose of project records in a way that provides adequate access for team members during the project and long-term retention for use in subsequent projects.
- 213: Identify, control and report upon the scheduling, publishing and release of all formal data items, and the replacement of obsolete versions, in accordance with the terms of the project plan.
- 214: Identify, control, and report upon selected baseline items, such as the project description, product specifications and process specifications, which formally define the project.
- 215: Collect and maintain a standard set of data on the project's processes, metrics, and lessons learned.
- 216: Provide general office support such as producing correspondence, document production and distribution services, and maintaining files and logs.
- 217: Design and implement procedures to ensure adequate project security, including such things as badges, sign-in registers, electronic lock accessibility, and monitoring the security related practices in all project facilities.

| ID | WBS | Task | Duration | Start | Finish | Total slack | Resources | Work | Text8 |
| --- | --- | --- | --- | --- | --- | --- | --- | --- | --- |
| 218 | 1.2.4 | **项目专门培训** | 1d? | 2008-01-31 13:00 | 2008-02-01 12:00 | 38d |  | 8h |  |
| 219 | 1.2.4.1 | [培训课程名] | 1d? | 2008-01-31 13:00 | 2008-02-01 12:00 | 38d | Trainer | 8h | key:195 |
| 220 | 1.2.5 | **QI Initiatives** | 1d? | 2008-01-30 08:00 | 2008-01-30 17:00 | 39.5d |  | 8h |  |
| 221 | 1.2.5.1 | [Quality Improvement Initiatives Task Name] | 1d? | 2008-01-30 08:00 | 2008-01-30 17:00 | 39.5d | Team member 1 | 8h |  |
| 222 | 1.2.6 | **非项目的工作** | 1d? | 2008-01-31 08:00 | 2008-01-31 17:00 | 38.5d |  | 8h |  |
| 223 | 1.2.6.1 | [Non-Project Task Name] | 1d? | 2008-01-31 08:00 | 2008-01-31 17:00 | 38.5d | Team member 1 | 8h |  |
| 224 | 1.2.7 | **缺陷预防活动** | 1d? | 2008-02-01 08:00 | 2008-02-01 17:00 | 37.5d |  | 8h |  |
| 225 | 1.2.7.1 | [Defect Prevention Task Name] | 1d? | 2008-02-01 08:00 | 2008-02-01 17:00 | 37.5d | Team member 1 | 8h |  |
| 226 | 1.2.8 | **知识管理活动** | 1d? | 2008-02-04 08:00 | 2008-02-04 17:00 | 36.5d |  | 8h |  |
| 227 | 1.2.8.1 | [Knowledge Management Task Name] | 1d? | 2008-02-04 08:00 | 2008-02-04 17:00 | 36.5d | Team member 1 | 8h |  |

Notes:
- 219: Provide staff, such as application, operations, and program maintenance personnel, with the knowledge and skills necessary to support the new system.
