# MPP_Template

Schedule from MS Project, 2008-01-30 to 2008-08-14, 7.5 hours a day.

## Calendars

- Standard: Mon-Fri 08:00-12:00, 13:00-17:00; Sat-Sun off. Exceptions (off unless hours are given): 2008-02-02 to 2008-02-03 08:00-12:00, 13:00-17:00, 2008-02-04 to 2008-02-17.
- 标准: Mon-Fri 08:00-12:00, 13:00-17:00; Sat-Sun off. Exceptions (off unless hours are given): 2008-02-02 to 2008-02-03 08:00-12:00, 13:00-17:00, 2008-02-04 to 2008-02-15.

## Resources

| Resource |
| --- |
| 项目经理 |
| SQA |
| SCM |
| 技术经理 |
| 客户代表 |
| Trainer |
| 部门经理 |
| 市场代表 |
| 售前工程师 |
| 测试负责人 |
| 开发工程师 |
| 美术工程师 |
| 研发中心 |
| 测试工程师 |
| 系统工程师 |
| SEPG |
| 一级维护人员 |
| 二级维护负责人 |
| 需求分析师 |
| 系统分析员 |
| Peer |
| QA经理 |
| 评审组长 |
| 其他评审员 |
| 其他评审人员 |

## Schedule

| ID | WBS | Task | Duration | Start | Finish | Total slack | Constraint | Resources | Work | Text8 |
| --- | --- | --- | --- | --- | --- | --- | --- | --- | --- | --- |
| 1 | 1 | **【项目名称】** | 142.59d? | 2008-01-30 | 2008-08-14 | 0d |  |  | 2237.68h |  |
| 2 | 1.1 | **Lifecycle－Waterfall** | 142.59d? | 2008-01-30 | 2008-08-14 | 0d |  |  | 1939h |  |
| 3 | 1.1.1 | **项目启动** | 1.13d? | 2008-01-30 | 2008-01-31 | 141.46d |  |  | 19.5h |  |
| 4 | 1.1.1.1 | Review 项目任务书 | 1.07d? | 2008-01-30 | 2008-01-30 | 141.52d | start no earlier than 2008-01-30 | 项目经理 [25%]; 技术经理 [25%]; SQA [25%] | 6h |  |
| 5 | 1.1.1.2 | 重新估算工作量 | 0.53d | 2008-01-30 | 2008-01-30 | 142.06d | start no earlier than 2008-01-30 | 项目经理 | 4h |  |
| 6 | 1.1.1.3 | 协商、签署项目任务书 | 1.07d? | 2008-01-30 | 2008-01-30 | 141.52d | start no earlier than 2008-01-30 | 项目经理 [25%] | 2h |  |
| 7 | 1.1.1.4 | 项目交接会议 | 1d | 2008-01-30 | 2008-01-31 | 141.46d |  | 项目经理; 技术经理; 开发工程师; SQA | 7.5h |  |
| 8 | 1.1.2 | **项目策划** | 139.12d? | 2008-01-30 | 2008-08-11 | 3.47d |  |  | 225.5h |  |
| 9 | 1.1.2.1 | 客户及项目情况非正式调研 | 1d? | 2008-01-30 | 2008-01-30 | 141.59d |  | 项目经理 | 7.5h |  |
| 10 | 1.1.2.2 | **准备项目工作环境** | 36.27d? | 2008-06-19 | 2008-08-06 | 6.67d |  |  | 12h |  |
| 11 | 1.1.2.2.1 | 准备项目需要用到的工具、设备 | 1.07d? | 2008-06-19 | 2008-06-20 | 41.87d |  | 项目经理 | 8h | key:53 |
| 12 | 1.1.2.2.2 | 设置项目管理环境 | 0.53d? | 2008-08-05 | 2008-08-06 | 6.67d |  | 项目经理 | 4h | key:55 |
| 13 | 1.1.2.3 | 选择项目生命周期模型 | 1.07d? | 2008-06-20 | 2008-06-23 | 40.8d |  | 项目经理 | 8h |  |
| 14 | 1.1.2.4 | 制定项目定义过程（裁剪组织定义过程） | 1.07d? | 2008-06-23 | 2008-06-24 | 39.73d |  | 项目经理 | 8h |  |
| 15 | 1.1.2.5 | **项目相关计划的编写、评审及审批** | 139.12d? | 2008-01-30 | 2008-08-11 | 3.47d |  |  | 136.5h |  |
| 16 | 1.1.2.5.1 | **项目策划书** | 139.12d? | 2008-01-30 | 2008-08-11 | 3.47d |  |  | 100.5h |  |
| 17 | 1.1.2.5.1.1 | **项目策划书编写准备** | 34.13d? | 2008-06-26 | 2008-08-11 | 3.47d |  |  | 51h |  |
| 18 | 1.1.2.5.1.1.1 | 研究过往相关项目和相关技术经验 | 1.07d? | 2008-06-30 | 2008-07-01 | 34.4d |  | 项目经理 | 8h | key:11 |
| 19 | 1.1.2.5.1.1.2 | 定义范围 | 0.53d? | 2008-08-06 | 2008-08-06 | 6.13d |  | 项目经理 | 4h | key:12 |
| 20 | 1.1.2.5.1.1.3 | 计算项目费用 | 0.53d? | 2008-08-06 | 2008-08-07 | 5.6d |  | 项目经理 | 4h | key:15 |
| 21 | 1.1.2.5.1.1.4 | 明示假设条件 | 0.53d? | 2008-08-07 | 2008-08-08 | 4.53d |  | 项目经理 | 4h | key:17 |
| 22 | 1.1.2.5.1.1.5 | 明确交付物和验收标准 | 0.53d? | 2008-08-07 | 2008-08-07 | 5.07d |  | 项目经理 | 4h | key:16 |
| 23 | 1.1.2.5.1.1.6 | 确立组织结构 | 0.13d? | 2008-08-11 | 2008-08-11 | 3.47d |  | 项目经理 | 1h | key:41 |
| 24 | 1.1.2.5.1.1.7 | 确定项目资源需求 | 1.07d? | 2008-07-01 | 2008-07-02 | 33.33d |  | 项目经理 | 8h |  |
| 25 | 1.1.2.5.1.1.8 | 识别项目干系人 | 0.13d? | 2008-06-26 | 2008-06-26 | 37.47d |  | 项目经理 | 1h |  |
| 26 | 1.1.2.5.1.1.9 | 识别培训 | 0.13d? | 2008-06-27 | 2008-06-27 | 36.4d |  | 项目经理 | 1h |  |
| 27 | 1.1.2.5.1.1.10 | 编写《风险记录表》 | 1.07d? | 2008-07-02 | 2008-07-03 | 32.27d |  | 项目经理 | 8h |  |
| 28 | 1.1.2.5.1.1.11 | 编写项目WBS | 1.07d? | 2008-07-03 | 2008-07-04 | 31.2d |  | 项目经理 | 8h |  |
| 29 | 1.1.2.5.1.2 | 编写项目策划书 | 1d? | 2008-01-30 | 2008-01-30 | 141.59d |  | 项目经理 | 7.5h |  |
| 30 | 1.1.2.5.1.3 | 项目策划书评审 | 2.11d? | 2008-02-18 | 2008-02-27 | 129.39d |  | 项目经理; 部门经理; 测试负责人; 开发工程师; SCM; SQA | 18h |  |
| 31 | 1.1.2.5.1.4 | 项目策划书评审后修改 | 1.07d? | 2008-07-07 | 2008-07-08 | 29.07d |  | 项目经理 | 8h |  |
| 32 | 1.1.2.5.1.5 | 验证对项目策划书的修改 | 1.28d? | 2008-01-30 | 2008-02-19 | 135.87d |  | 部门经理; 测试负责人; 开发工程师; SCM; SQA | 12h |  |
| 33 | 1.1.2.5.1.6 | 项目策划书内部审批 | 0.27d? | 2008-02-18 | 2008-02-18 | 136.99d |  | 部门经理 | 2h |  |
| 34 | 1.1.2.5.1.7 | 项目策划书外部审批 | 0.27d? | 2008-01-30 | 2008-01-30 | 142.32d |  | 客户代表 | 2h |  |

Notes:
- 1: 说明： / 1. 本WBS是一个样本，各项目应该根据自己项目的实际情况，调整任务项及顺序。 / 2. 由于资源名称中直接用角色代替而未考虑某种角色需要的数量，亦未考虑任务间的关联性，因此本模板中的工时和工期数据没有实际意义，请忽略。
- 4: 包括Review项目合同基本信息.
- 11: Obtain and furnish work space with the appropriate facilities.
- 12: Implement the project management tools to be used by the project team to manage performance.
- 18: Research previous experience with similar projects and with similar technologies and obtain sample materials.
- 19: Establish and maintain a common understanding with the customer of the scope of the project.
- 20: 如差旅费、住宿费、生活补贴、交通及通讯费等。
- 21: Maintain an ongoing list of the assumptions on which the estimates and schedules are based.
- 22: Create a clear and unambiguous definition of each deliverable in terms of format, size and quality requirements, and specify the acceptance procedures and acceptance criteria for each deliverable.
- 23: Create an effective and efficient project organization structure.
- 30: 1. 在项目策划阶段项目经理根据对项目背景和客户需求的初步了解制定项目的总体WBS,除了项目启动、项目需求阶段和项目策划阶段的工作需要明确并细化，其他阶段的工作可以先只给出阶段名称和阶段的时间点要求，如设计阶段、编码阶段等后续阶段工作。 / 2. 在需求评审通过后，项目经理需要细化其他各阶段的任务，如果存在某些阶段任务当前仍无法明确的可以按第1点描述处理，但必须在某阶段工作开始前细化该阶段的工作任务。 / 3. 项目策划书的评审可在需求评审后进行。

| ID | WBS | Task | Type | Duration | Start | Finish | Total slack | Resources | Work | Text8 |
| --- | --- | --- | --- | --- | --- | --- | --- | --- | --- | --- |
| 35 | 1.1.2.5.2 | **项目质量保证策划书** |  | 22.82d? | 2008-01-30 | 2008-03-11 | 119.77d |  | 18h |  |
| 36 | 1.1.2.5.2.1 | 编写项目质量保证策划书 |  | 1.07d? | 2008-01-30 | 2008-01-30 | 141.52d | SQA | 8h |  |
| 37 | 1.1.2.5.2.2 | 质量保证策划书评审 |  | 0.38d? | 2008-02-18 | 2008-02-18 | 136.88d | 部门经理; 项目经理 | 5h |  |
| 38 | 1.1.2.5.2.3 | 质量保证策划书评审后修改 |  | 0.4d? | 2008-02-22 | 2008-02-25 | 131.67d | SQA | 3h |  |
| 39 | 1.1.2.5.2.4 | 验证对质量保证策划书的修改 |  | 0.27d? | 2008-02-18 | 2008-03-11 | 119.77d | 部门经理; 项目经理 | 2h |  |
| 40 | 1.1.2.5.3 | **配置管理计划** |  | 39.5d? | 2008-01-30 | 2008-04-02 | 103.09d |  | 18h |  |
| 41 | 1.1.2.5.3.1 | 编写配置管理计划 |  | 1.07d? | 2008-01-30 | 2008-01-30 | 141.52d | SCM | 8h |  |
| 42 | 1.1.2.5.3.2 | 配置管理计划评审 |  | 0.67d? | 2008-02-26 | 2008-04-01 | 104.02d | 项目经理; SQA | 5h |  |
| 43 | 1.1.2.5.3.3 | 配置管理计划评审后修改 |  | 0.27d? | 2008-02-18 | 2008-02-18 | 136.99d | SCM | 2h |  |
| 44 | 1.1.2.5.3.4 | 验证对配置管理计划的修改 |  | 0.4d? | 2008-02-27 | 2008-04-02 | 103.09d | 项目经理; SQA | 3h |  |
| 45 | 1.1.2.6 | 提交SCM建立计划基线 |  | 0.27d? | 2008-07-08 | 2008-07-08 | 28.8d | 项目经理 | 2h |  |
| 46 | 1.1.2.7 | **组建项目团队** |  | 40.4d? | 2008-06-18 | 2008-08-11 | 3.6d |  | 13h |  |
| 47 | 1.1.2.7.1 | 获取资源 |  | 0.27d? | 2008-08-11 | 2008-08-11 | 3.6d | 项目经理 | 2h | key:43 |
| 48 | 1.1.2.7.2 | 团队磨合 |  | 1.07d? | 2008-06-18 | 2008-06-19 | 42.93d | 项目经理 | 8h | key:44 |
| 49 | 1.1.2.7.3 | 确立团队管理的标准和流程 |  | 0.4d? | 2008-08-08 | 2008-08-08 | 4.13d | 项目经理 | 3h | key:45 |
| 50 | 1.1.2.8 | 项目内部启动会 |  | 1.87d? | 2008-01-31 | 2008-02-20 | 134.64d | SCM; SQA; 部门经理; 测试负责人; 技术经理; 开发工程师; 市场代表; 售前工程师; 项目经理 | 18h |  |
| 51 | 1.1.2.9 | **项目启动会** |  | 2.4d? | 2008-07-09 | 2008-07-11 | 25.6d |  | 20.5h |  |
| 52 | 1.1.2.9.1 | 准备《项目启动会议.ppt》 |  | 1.07d? | 2008-07-09 | 2008-07-10 | 26.93d | 项目经理 | 8h |  |
| 53 | 1.1.2.9.2 | 发出项目启动会通知 |  | 0.07d? | 2008-07-10 | 2008-07-10 | 26.87d | 项目经理 | 0.5h |  |
| 54 | 1.1.2.9.3 | 召开项目启动会 |  | 0.27d? | 2008-07-11 | 2008-07-11 | 25.6d | 项目经理; 部门经理; 技术经理; 客户代表; 售前工程师; 市场代表 | 12h |  |
| 55 | 1.1.3 | 策划完成 | milestone | 0d | 2008-01-30 | 2008-01-30 | 142.59d |  |  |  |
| 56 | 1.1.4 | **需求调研、用户验收测试计划及用例** |  | 122.06d? | 2008-01-30 | 2008-07-18 | 20.53d |  | 398.5h |  |
| 57 | 1.1.4.1 | 制定需求调研计划 |  | 1.07d? | 2008-03-11 | 2008-04-07 | 99.56d | 技术经理; 项目经理 | 8h |  |
| 58 | 1.1.4.2 | 与客户确认需求调研计划 |  | 0.8d? | 2008-02-18 | 2008-02-28 | 127.75d | 技术经理; 项目经理; 客户代表 | 6h |  |

Notes:
- 37: 此任务资源中的部门经理是指SQA的部门经理。
- 39: 此任务资源中的部门经理是指SQA的部门经理。
- 47: Negotiate for resources and prepare action plans to identify any staffing deficiencies.
- 48: Provide a formal orientation to the project and build a common understanding within the team.
- 49: Define and document the specific standards and procedures for the general conduct of the project team.

| ID | WBS | Task | Type | Duration | Start | Finish | Total slack | Resources | Work |
| --- | --- | --- | --- | --- | --- | --- | --- | --- | --- |
| 59 | 1.1.4.3 | **需求调研** |  | 1.07d? | 2008-02-18 | 2008-02-18 | 136.19d |  | 24h |
| 60 | 1.1.4.3.1 | 业务需求调研 |  | 1.07d? | 2008-02-18 | 2008-02-18 | 136.19d | 项目经理 | 8h |
| 61 | 1.1.4.3.2 | UI需求调研 |  | 1.07d? | 2008-02-18 | 2008-02-18 | 136.19d | 美术工程师 | 8h |
| 62 | 1.1.4.3.3 | 系统环境调研 |  | 1.07d? | 2008-02-18 | 2008-02-18 | 136.19d | 项目经理 | 8h |
| 63 | 1.1.4.4 | 原型及界面制作 |  | 1.33d? | 2008-01-30 | 2008-01-31 | 141.26d | 美术工程师; 项目经理 | 20h |
| 64 | 1.1.4.5 | 客户需求分析 |  | 4d? | 2008-01-30 | 2008-02-02 | 138.59d | 项目经理 | 30h |
| 65 | 1.1.4.6 | 编写客户需求说明书 |  | 3.2d? | 2008-02-18 | 2008-02-20 | 134.06d | 项目经理 | 24h |
| 66 | 1.1.4.7 | 客户需求确认 |  | 1.07d? | 2008-02-18 | 2008-02-18 | 136.19d | 客户代表 | 8h |
| 67 | 1.1.4.8 | 产品需求分析 |  | 4d? | 2008-01-30 | 2008-02-02 | 138.59d | 项目经理 | 30h |
| 68 | 1.1.4.9 | 编写需求规格说明书（SRS） |  | 3.2d? | 2008-02-18 | 2008-02-20 | 134.06d | 项目经理 | 24h |
| 69 | 1.1.4.10 | 编写需求跟踪矩阵（RTM） |  | 1.07d? | 2008-02-18 | 2008-02-18 | 136.19d | 项目经理 | 8h |
| 70 | 1.1.4.11 | 重新估算工作量 |  | 1d? | 2008-01-30 | 2008-01-30 | 141.59d | 项目经理 | 7.5h |
| 71 | 1.1.4.12 | 调整项目相关计划（需要时） |  | 1.07d? | 2008-07-17 | 2008-07-18 | 20.53d | 项目经理 | 8h |
| 72 | 1.1.4.13 | 内部评审SRS & RTM & 工作量 |  | 6d? | 2008-01-31 | 2008-02-21 | 133.14d | 部门经理; 测试负责人; 技术经理; 开发工程师; 项目经理; SQA; 评审组长; 其他评审员 | 72h |
| 73 | 1.1.4.14 | 修改SRS & RTM |  | 1.07d? | 2008-02-18 | 2008-02-18 | 136.19d | 项目经理 | 8h |
| 74 | 1.1.4.15 | 验证对SRS & RTM的修改 |  | 1.39d? | 2008-02-01 | 2008-02-22 | 132.66d | 部门经理; 测试负责人; 技术经理; 开发工程师; 项目经理; SQA; 评审组长; 其他评审员 | 18h |
| 75 | 1.1.4.16 | 签名确认SRS |  | 1.07d? | 2008-02-18 | 2008-02-18 | 136.19d | 客户代表 | 8h |
| 76 | 1.1.4.17 | **用户验收测试计划及用例** |  | 112.52d? | 2008-02-18 | 2008-07-14 | 24.73d |  | 68h |
| 77 | 1.1.4.17.1 | 准备UAT测试计划 |  | 0.53d? | 2008-06-10 | 2008-06-11 | 49.33d | 项目经理; 客户代表 | 8h |
| 78 | 1.1.4.17.2 | UAT测试计划评审 |  | 0.8d? | 2008-02-18 | 2008-02-25 | 131.4d | SQA; 客户代表 | 6h |
| 79 | 1.1.4.17.3 | UAT测试计划修改 |  | 0.07d? | 2008-07-14 | 2008-07-14 | 24.73d | 项目经理; 客户代表 | 1h |
| 80 | 1.1.4.17.4 | UAT测试计划修改确认 |  | 0.27d? | 2008-02-18 | 2008-02-26 | 130.6d | SQA; 客户代表 | 2h |
| 81 | 1.1.4.17.5 | 准备UAT测试用例 |  | 1.6d? | 2008-02-18 | 2008-02-19 | 135.66d | 客户代表; 项目经理 | 24h |
| 82 | 1.1.4.17.6 | 更新需求跟踪矩阵(RTM) |  | 0.53d? | 2008-02-26 | 2008-02-27 | 129.67d | 技术经理 | 4h |
| 83 | 1.1.4.17.7 | UAT测试用例 & RTM评审 |  | 1.6d? | 2008-02-20 | 2008-03-21 | 111.13d | 项目经理; 技术经理 | 12h |
| 84 | 1.1.4.17.8 | UAT测试用例 & RTM修改 |  | 0.33d? | 2008-02-18 | 2008-02-18 | 136.92d | 客户代表; 项目经理 | 5h |
| 85 | 1.1.4.17.9 | UAT测试用例 & RTM修改确认 |  | 0.8d? | 2008-02-21 | 2008-03-27 | 107.26d | 项目经理; 技术经理 | 6h |
| 86 | 1.1.4.18 | 提交SCM建立需求基线 |  | 0.13d? | 2008-07-15 | 2008-07-15 | 23.6d | 项目经理 | 1h |
| 87 | 1.1.4.19 | 阶段审计 |  | 2.13d? | 2008-02-28 | 2008-03-03 | 126.1d | SQA | 16h |
| 88 | 1.1.4.20 | 阶段总结会议 |  | 1.33d? | 2008-02-20 | 2008-03-19 | 112.73d | 部门经理; 项目经理; 技术经理; 开发工程师; SQA | 10h |
| 89 | 1.1.5 | 需求阶段结束 | milestone | 0d | 2008-01-30 | 2008-01-30 | 142.59d |  |  |

Notes:
- 59: 根据与客户确认的需求调研计划细分出需求调研任务并分配资源（包括客户方协助调研的资源）。
- 62: 包括软件环境、硬件软件和网络环境等。
- 71: 根据估算结果确定是否需要重新调整相关计划，如果对计划的调整满足了计划变更要求需要走计划变更流程来修改计划（如里程碑的延期、项目整体进度的延期）。
- 72: 如果工作量评审不通过则需要重新安排估算或以评审达成一致的工作量为依据来制定项目的计划。
- 76: Acceptance Test Plans which will be executed at Customer Site.
- 77: Use standard template for Acceptance test plan.
- 81: 1. 此任务的负责人不是测试负责人，而是当客户要求UAT测试用例由项目组编写或要求公司为客户的UAT测试用例的编写人员提供指导，测试负责人需要提供相关帮助。 / 2.原则上UAT测试计划和UAT测试用例由客户方负责编写，但具体由项目经理和客户代表确定。
- 82: Use Standard format for Requirements Traceability Matrix and trace requirements from one phase to other phase. It includes both horizontal traceability and vertical traceability

| ID | WBS | Task | Type | Duration | Start | Finish | Total slack | Resources | Work | Text8 |
| --- | --- | --- | --- | --- | --- | --- | --- | --- | --- | --- |
| 90 | 1.1.6 | **概要设计、集成测试计划及用例** |  | 122.19d? | 2008-01-30 | 2008-07-18 | 20.4d |  | 220h |  |
| 91 | 1.1.6.1 | **技术攻关** |  | 9.86d? | 2008-03-12 | 2008-03-25 | 108.86d |  | 34h |  |
| 92 | 1.1.6.1.1 | 列举需用到的新技术 |  | 0.27d? | 2008-03-12 | 2008-03-12 | 118.45d | 技术经理 | 2h |  |
| 93 | 1.1.6.1.2 | 进行技术攻关 |  | 4.27d? | 2008-03-19 | 2008-03-25 | 108.86d | 技术经理 | 32h |  |
| 94 | 1.1.6.2 | **概要设计(HLD)** |  | 26.31d? | 2008-01-30 | 2008-03-14 | 116.28d |  | 82h |  |
| 95 | 1.1.6.2.1 | 识别多个可选方案 |  | 2.67d? | 2008-01-30 | 2008-02-01 | 139.92d | 技术经理 | 20h |  |
| 96 | 1.1.6.2.2 | 评估和选择设计方案 |  | 1.07d? | 2008-01-30 | 2008-01-30 | 141.52d | 技术经理 | 8h |  |
| 97 | 1.1.6.2.3 | 准备概要设计文档(HLD) |  | 1.87d? | 2008-02-18 | 2008-02-19 | 135.39d | 技术经理 | 14h |  |
| 98 | 1.1.6.2.4 | 更新需求跟踪矩阵 (RTM) |  | 0.53d? | 2008-02-26 | 2008-02-26 | 130.2d | 技术经理 | 4h |  |
| 99 | 1.1.6.2.5 | 评审 HLD & RTM |  | 2.13d? | 2008-02-18 | 2008-03-03 | 125.83d | 项目经理; 技术经理; 评审组长; 其他评审员 | 24h |  |
| 100 | 1.1.6.2.6 | 修改HLD & RTM |  | 1.07d? | 2008-02-18 | 2008-02-18 | 136.19d | 技术经理 | 8h |  |
| 101 | 1.1.6.2.7 | 验证对HLD & RTM的修改 |  | 0.36d? | 2008-02-19 | 2008-03-14 | 116.28d | 项目经理; 技术经理; 评审组长; 其他评审员 | 4h | key:79 |
| 102 | 1.1.6.3 | **集成测试计划及用例** |  | 31.79d? | 2008-02-18 | 2008-03-28 | 105.46d |  | 77h |  |
| 103 | 1.1.6.3.1 | 确定集成顺序 |  | 1.07d? | 2008-02-18 | 2008-02-18 | 136.19d | 技术经理 | 8h |  |
| 104 | 1.1.6.3.2 | 制定集成测试计划(ITP)和测试用例(ITC) |  | 3.73d? | 2008-02-18 | 2008-02-22 | 132.47d | 技术经理 | 28h |  |
| 105 | 1.1.6.3.3 | 评审 ITP & ITC |  | 3.2d? | 2008-02-19 | 2008-03-20 | 112.46d | 项目经理; 技术经理 | 24h |  |
| 106 | 1.1.6.3.4 | 修订 ITP & ITC |  | 1.07d? | 2008-02-20 | 2008-02-21 | 133d | 技术经理 | 8h |  |
| 107 | 1.1.6.3.5 | 验证对ITP和ITC的修改 |  | 1.2d? | 2008-02-21 | 2008-03-28 | 105.46d | 项目经理; 技术经理 | 9h |  |
| 108 | 1.1.6.4 | 提交SCM建立概要设计基线 |  | 0.13d? | 2008-07-18 | 2008-07-18 | 20.4d | 项目经理 | 1h |  |
| 109 | 1.1.6.5 | 阶段审计 |  | 2.13d? | 2008-02-29 | 2008-03-04 | 124.9d | SQA | 16h |  |
| 110 | 1.1.6.6 | 阶段总结会议 |  | 1.33d? | 2008-02-21 | 2008-03-25 | 108.46d | 部门经理; 项目经理; 技术经理; 开发工程师; SQA | 10h |  |
| 111 | 1.1.7 | 概要设计完成 | milestone | 0d | 2008-01-30 | 2008-01-30 | 142.59d |  |  |  |
| 112 | 1.1.8 | **详细设计、单元测试计划及用例** |  | 120.59d? | 2008-02-01 | 2008-07-21 | 19.33d |  | 199h |  |
| 113 | 1.1.8.1 | **详细设计（LLD）** |  | 23.39d? | 2008-02-01 | 2008-03-14 | 116.53d |  | 114h | key:89 |
| 114 | 1.1.8.1.1 | 数据模型设计 |  | 2.13d? | 2008-02-01 | 2008-02-03 | 137.79d | 技术经理 | 16h | key:90 |
| 115 | 1.1.8.1.2 | 功能组件设计 |  | 2.13d? | 2008-02-18 | 2008-02-19 | 135.12d | 技术经理 | 16h | key:91 |
| 116 | 1.1.8.1.3 | 用户接口设计 |  | 1.07d? | 2008-02-22 | 2008-02-25 | 130.87d | 技术经理 | 8h | key:92 |
| 117 | 1.1.8.1.4 | 编写LLD文档 |  | 2.13d? | 2008-02-18 | 2008-02-19 | 135.12d | 技术经理 | 16h |  |
| 118 | 1.1.8.1.5 | 更新需求跟踪矩阵(RTM) |  | 0.53d? | 2008-02-26 | 2008-02-27 | 129.67d | 技术经理 | 4h |  |
| 119 | 1.1.8.1.6 | 评审LLD 和 RTM |  | 2.67d? | 2008-02-18 | 2008-03-07 | 121.33d | 项目经理; 技术经理; 测试负责人; 开发工程师; 评审组长; 其他评审员 | 40h |  |
| 120 | 1.1.8.1.7 | 修改LLD 和 RTM |  | 0.53d? | 2008-02-27 | 2008-02-27 | 129.14d | 技术经理 | 4h |  |
| 121 | 1.1.8.1.8 | 验证LLD和RTM的修改 |  | 0.89d? | 2008-02-19 | 2008-03-14 | 116.53d | 项目经理; 技术经理; 测试负责人; 开发工程师; 评审组长; 其他评审员 | 10h |  |

Notes:
- 94: The output of this activity is to prepare a detailed HLD Document
- 95: Identify various possible design solutions to meet the requirements
- 96: Evaluate alternate design solutions. If possible apply Decision Analysis and Resolution technique for this purpose. Use Pugh matrix
- 97: Use standard template for preparation of HLD
- 98: Use Standard format for Requirements Traceability Matrix and trace requirements from one phase to other phase. It includes both horizontal traceability and vertical traceability
- 99: Conduct a formal review on HLD and obtain defects and suggestions from peers
- 100: Fix the defects and incorporate suggestions
- 101: The reviewer needs to verify the rework done by the author
- 102: Generally Integrated test planning activities start with HLD
- 103: Identify various integration Sequences and establish best feasible sequence
- 104: Prepare Integrated Test plan with integration sequence, how to manage interfaces etc. Use standard template for this purpose.
- 105: Conduct a formal review on ITP and ITC
- 106: Close review defects and suggestions
- 107: Reviewer has to verify rework done by the author
- 113: The output of this phase is to prepare a detailed low level design document
- 114: Develop detailed data design which is an important input for LLD
- 115: Refine the entities and relationships, and define the attributes and business rules (such as cardinality, optionality, edit rules, and deviation rules) that are to be used by the system.
- 116: Consider GUI guidelines and ergonomic standards while design GUI part
- 117: Use standard template for low level design document
- 118: Use Standard format for Requirements Traceability Matrix and trace requirements from one phase to other phase. It includes both horizontal traceability and vertical traceability
- 119: Conduct a formal review on Low Level Design Document
- 120: Close review defects and incorpore review suggestions
- 121: Reviewer has to verify rework done by the author for completeness

| ID | WBS | Task | Type | Duration | Start | Finish | Total slack | Resources | Work |
| --- | --- | --- | --- | --- | --- | --- | --- | --- | --- |
| 122 | 1.1.8.2 | **单元测试计划及用例** |  | 51.73d? | 2008-02-18 | 2008-04-24 | 85.53d |  | 56h |
| 123 | 1.1.8.2.1 | 准备单元测试计划和单元测试用例 |  | 3.2d? | 2008-03-11 | 2008-03-14 | 116.82d | 开发工程师 | 24h |
| 124 | 1.1.8.2.2 | 更新需求跟踪矩阵(RTM) |  | 0.53d? | 2008-02-26 | 2008-02-27 | 129.67d | 技术经理 | 4h |
| 125 | 1.1.8.2.3 | 评审单元测试计划 & 单元测试用例 & RTM |  | 2.67d? | 2008-02-18 | 2008-02-28 | 128.4d | 项目经理; 技术经理 | 20h |
| 126 | 1.1.8.2.4 | 修订单元测试计划 & 单元测试用例 & RTM |  | 0.53d? | 2008-04-23 | 2008-04-24 | 85.53d | 开发工程师 | 4h |
| 127 | 1.1.8.2.5 | 验证单元测试计划 & 单元测试用例 & RTM的修改 |  | 0.53d? | 2008-02-18 | 2008-02-29 | 127.34d | 项目经理; 技术经理 | 4h |
| 128 | 1.1.8.3 | 提交SCM建立详细设计基线 |  | 0.13d? | 2008-07-21 | 2008-07-21 | 19.33d | 项目经理 | 1h |
| 129 | 1.1.8.4 | 阶段审计 |  | 2.13d? | 2008-03-03 | 2008-03-05 | 123.83d | SQA | 16h |
| 130 | 1.1.8.5 | 阶段总结会议 |  | 1.4d? | 2008-02-18 | 2008-03-13 | 117.44d | 部门经理; 项目经理; 技术经理; 测试负责人; 开发工程师; SQA | 12h |
| 131 | 1.1.9 | 详细设计完成 | milestone | 0d | 2008-01-30 | 2008-01-30 | 142.59d |  |  |
| 132 | 1.1.10 | **系统实现** |  | 124.32d? | 2008-01-30 | 2008-07-22 | 18.27d |  | 234h |
| 133 | 1.1.10.1 | **编码、单元测试** |  | 42.13d? | 2008-01-30 | 2008-04-04 | 100.46d |  | 121h |
| 134 | 1.1.10.1.1 | **模块1** |  | 42.13d? | 2008-01-30 | 2008-04-04 | 100.46d |  | 53h |
| 135 | 1.1.10.1.1.1 | 模块1编码 |  | 4.27d? | 2008-03-20 | 2008-03-26 | 107.53d | 开发工程师 | 32h |
| 136 | 1.1.10.1.1.2 | 更新需求跟踪矩阵（RTM） |  | 0.53d? | 2008-04-03 | 2008-04-04 | 100.46d | 开发工程师 | 4h |
| 137 | 1.1.10.1.1.3 | 代码评审 |  | 0.4d? | 2008-01-30 | 2008-01-30 | 142.19d | 开发工程师 | 3h |
| 138 | 1.1.10.1.1.4 | **单元测试** |  | 1.33d? | 2008-03-21 | 2008-03-25 | 109.4d |  | 5h |
| 139 | 1.1.10.1.1.4.1 | 执行单元测试 |  | 0.53d? | 2008-03-21 | 2008-03-24 | 110.06d | 开发工程师 | 4h |
| 140 | 1.1.10.1.1.4.2 | 记录测试结果 |  | 0.13d? | 2008-03-24 | 2008-03-25 | 109.4d | 开发工程师 | 1h |
| 141 | 1.1.10.1.1.5 | 修改模块1 |  | 1.07d? | 2008-03-25 | 2008-03-26 | 107.4d | 开发工程师 | 8h |
| 142 | 1.1.10.1.1.6 | 验证模块1修改 |  | 0.13d? | 2008-03-26 | 2008-03-27 | 107.26d | 开发工程师 | 1h |
| 143 | 1.1.10.1.2 | **模块 n** |  | 29.96d? | 2008-02-26 | 2008-04-04 | 100.46d |  | 68h |
| 144 | 1.1.10.1.2.1 | 模块n编码 |  | 5.33d? | 2008-03-27 | 2008-04-03 | 101d | 开发工程师 | 40h |
| 145 | 1.1.10.1.2.2 | 更新需求跟踪矩阵（RTM） |  | 0.53d? | 2008-04-03 | 2008-04-04 | 100.46d | 开发工程师 | 4h |
| 146 | 1.1.10.1.2.3 | 代码评审 |  | 0.67d? | 2008-02-26 | 2008-02-27 | 129.75d | 开发工程师 | 5h |

Notes:
- 122: This is a concurrent activity along with Low Level Design
- 123: Use Standard template for unit test plan and test cases
- 124: Use Standard format for Requirements Traceability Matrix and trace requirements from one phase to other phase. It includes both horizontal traceability and vertical traceability
- 125: Conduct a formal review on Unit Test Plan and Test Cases
- 126: Close review defects and incorporate review suggestions
- 127: Author has to verify rework done by the author for completeness
- 132: 可以按项目计划的发布版本数来组织系统实现阶段的任务。此模版是按一次性发布方式来组织系统实现阶段的任务。
- 135: Develop detailed programs by using designs and other standards
- 136: Use Standard format for Requirements Traceability Matrix and trace requirements from one phase to other phase. It includes both horizontal traceability and vertical traceability
- 137: Identify peers and conduct code reviews by using standard checklists and other standards
- 141: Fix code review defects and other best practices suggested by the peers / reviewers
- 142: Reviewer has to verify rework done by the author for completeness
- 144: Develop detailed programs by using designs and other standards
- 145: Use Standard format for Requirements Traceability Matrix and trace requirements from one phase to other phase. It includes both horizontal traceability and vertical traceability
- 146: Identify peers and conduct code reviews by using standard checklists and other standards

| ID | WBS | Task | Type | Duration | Start | Finish | Total slack | Resources | Work |
| --- | --- | --- | --- | --- | --- | --- | --- | --- | --- |
| 147 | 1.1.10.1.2.4 | **单元测试** |  | 1.2d? | 2008-03-28 | 2008-04-01 | 104.06d |  | 9h |
| 148 | 1.1.10.1.2.4.1 | 执行单元测试 |  | 1.07d? | 2008-03-28 | 2008-03-31 | 104.2d | 开发工程师 | 8h |
| 149 | 1.1.10.1.2.4.2 | 记录测试结果 |  | 0.13d? | 2008-03-31 | 2008-04-01 | 104.06d | 开发工程师 | 1h |
| 150 | 1.1.10.1.2.5 | 修改模块n |  | 1.07d? | 2008-04-01 | 2008-04-02 | 102.06d | 开发工程师 | 8h |
| 151 | 1.1.10.1.2.6 | 验证模块n修改 |  | 0.27d? | 2008-04-02 | 2008-04-03 | 101.8d | 开发工程师 | 2h |
| 152 | 2.5 | **集成测试** |  | 46.39d? | 2008-01-30 | 2008-04-10 | 96.2d |  | 51.5h |
| 153 | 1.1.10.2.1 | 模块集成 |  | 1.07d? | 2008-04-04 | 2008-04-07 | 98.86d | 开发工程师 | 8h |
| 154 | 1.1.10.2.2 | 建立集成测试环境 |  | 1.07d? | 2008-04-07 | 2008-04-08 | 97.8d | 开发工程师 | 8h |
| 155 | 1.1.10.2.3 | 进行集成测试 |  | 2.13d? | 2008-03-13 | 2008-03-17 | 115.26d | 开发工程师 | 16h |
| 156 | 1.1.10.2.4 | 记录测试结果 |  | 1d? | 2008-01-30 | 2008-01-30 | 141.59d | 开发工程师 | 7.5h |
| 157 | 1.1.10.2.5 | 修改缺陷 |  | 1.07d? | 2008-04-08 | 2008-04-09 | 96.73d | 开发工程师 | 8h |
| 158 | 1.1.10.2.6 | 验证修改 |  | 0.53d? | 2008-04-09 | 2008-04-10 | 96.2d | 开发工程师 | 4h |
| 159 | 1.1.10.3 | 提交SCM建立代码基线 |  | 0.13d? | 2008-07-22 | 2008-07-22 | 18.27d | 项目经理 | 1h |
| 160 | 1.1.10.4 | **BVT测试** |  | 49.46d? | 2008-01-30 | 2008-04-15 | 93.13d |  | 34.5h |
| 161 | 1.1.10.4.1 | 建立BVT测试环境 |  | 1.07d? | 2008-04-10 | 2008-04-11 | 94.6d | 开发工程师 | 8h |
| 162 | 1.1.10.4.2 | 进行BVT测试 |  | 1.07d? | 2008-02-29 | 2008-03-03 | 126.02d | 开发工程师 | 8h |
| 163 | 1.1.10.4.3 | 记录测试结果 |  | 1d? | 2008-01-30 | 2008-01-30 | 141.59d | 开发工程师 | 7.5h |
| 164 | 1.1.10.4.4 | 修改缺陷 |  | 1.07d? | 2008-04-11 | 2008-04-14 | 93.53d | 开发工程师 | 8h |
| 165 | 1.1.10.4.5 | 验证修改 |  | 0.4d? | 2008-04-14 | 2008-04-15 | 93.13d | 开发工程师 | 3h |
| 166 | 1.1.10.5 | 阶段审计 |  | 2.13d? | 2008-03-04 | 2008-03-06 | 122.76d | SQA | 16h |
| 167 | 1.1.10.6 | 阶段总结会议 |  | 1d? | 2008-02-25 | 2008-03-31 | 104.73d | 部门经理; 项目经理; 技术经理; 开发工程师; SQA | 10h |
| 168 | 1.1.11 | 编码结束 | milestone | 0d | 2008-01-30 | 2008-01-30 | 142.59d |  |  |
| 169 | 1.1.12 | **系统测试** |  | 126.46d? | 2008-01-30 | 2008-07-24 | 16.13d |  | 212h |
| 170 | 1.1.12.1 | **系统测试计划及用例** |  | 19.67d? | 2008-01-30 | 2008-03-06 | 122.92d |  | 104h |
| 171 | 1.1.12.1.1 | 准备系统测试计划 (STP) |  | 1.07d? | 2008-03-05 | 2008-03-06 | 122.92d | 测试负责人 | 8h |
| 172 | 1.1.12.1.2 | 系统测试计划评审 |  | 1.47d? | 2008-02-18 | 2008-03-03 | 126.02d | 项目经理; 技术经理; 测试工程师; SQA | 12h |
| 173 | 1.1.12.1.3 | 系统测试计划修改 |  | 0.27d? | 2008-02-22 | 2008-02-22 | 132.52d | 测试负责人 | 2h |
| 174 | 1.1.12.1.4 | 系统测试计划修改确认 |  | 0.3d? | 2008-01-30 | 2008-02-02 | 139.29d | 项目经理; 技术经理; 测试工程师; SQA | 3h |
| 175 | 1.1.12.1.5 | 准备系统测试用例 (STC) |  | 4d? | 2008-01-30 | 2008-02-02 | 138.59d | 测试负责人 | 30h |
| 176 | 1.1.12.1.6 | 更新需求跟踪矩阵(RTM) |  | 0.53d? | 2008-02-26 | 2008-02-27 | 129.67d | 技术经理 | 4h |
| 177 | 1.1.12.1.7 | 系统测试用例 & RTM评审 |  | 4d? | 2008-02-18 | 2008-03-03 | 126.42d | 项目经理; 技术经理; 测试工程师; SQA | 32h |
| 178 | 1.1.12.1.8 | 系统测试用例 & RTM修改 |  | 0.67d? | 2008-02-25 | 2008-02-25 | 130.92d | 测试负责人 | 5h |
| 179 | 1.1.12.1.9 | 系统测试用例 & RTM修改确认 |  | 1.07d? | 2008-01-31 | 2008-02-20 | 134.86d | 项目经理; 技术经理; 测试工程师; SQA | 8h |

Notes:
- 150: Fix code review defects and other best practices suggested by the peers / reviewers
- 151: Reviewer has to verify rework done by the author for completeness
- 153: As per integration sequence and strategy, integrate various modules
- 154: Test environment includes hardware, software, communication etc
- 155: Conduct integration testing as per Integration test plan and test cases prepared for this purpose
- 157: Fix integration testing defects
- 170: System Test Planning Activities generally start with preparation of SRS
- 171: Prepare system test plan with system test environment and entry and exit criteria etc
- 172: Conduct a formal review on system test plan
- 175: 系统测试用例的准备周期可以根据测试部选择的测试模型来确定，其编写周期可能会跨项目的多个阶段，如从概要设计到编码阶段。所以项目经理在跟项目的测试负责人沟通后在此WBS中只要明确测试用例的开始时间、结束时间、计划的工作量和负责人即可，具体测试用例的编写计划是在测试负责人的系统测试计划中安排。
- 176: Use Standard format for Requirements Traceability Matrix and trace requirements from one phase to other phase. It includes both horizontal traceability and vertical traceability
- 177: Conduct a formal review on system test cases

| ID | WBS | Task | Type | Duration | Start | Finish | Total slack | Resources | Work | Text8 |
| --- | --- | --- | --- | --- | --- | --- | --- | --- | --- | --- |
| 180 | 1.1.12.2 | **XXX版本系统测试** |  | 123.26d? | 2008-02-01 | 2008-07-23 | 17.2d |  | 54h |  |
| 181 | 1.1.12.2.1 | 提交系统测试申请（即送测单） |  | 0.13d? | 2008-07-23 | 2008-07-23 | 17.2d | 项目经理 | 1h |  |
| 182 | 1.1.12.2.2 | 审核系统测试申请 |  | 0.13d? | 2008-02-26 | 2008-02-26 | 130.39d | 测试负责人 | 1h |  |
| 183 | 1.1.12.2.3 | 建立系统测试环境 |  | 1.07d? | 2008-02-27 | 2008-02-28 | 128.39d | 测试负责人 | 8h |  |
| 184 | 1.1.12.2.4 | 进行系统测试 |  | 2.13d? | 2008-02-01 | 2008-02-20 | 134.38d | 测试负责人; 测试工程师 | 16h |  |
| 185 | 1.1.12.2.5 | 修改缺陷 |  | 1.07d? | 2008-04-15 | 2008-04-16 | 91.4d | 开发工程师 | 8h |  |
| 186 | 1.1.12.2.6 | 回归测试 |  | 2.13d? | 2008-02-18 | 2008-02-26 | 130.11d | 测试负责人; 测试工程师 | 16h |  |
| 187 | 1.1.12.2.7 | 提交系统测试报告 |  | 0.53d? | 2008-02-28 | 2008-02-28 | 127.86d | 测试负责人 | 4h |  |
| 188 | 1.1.12.3 | **XXX版本系统测试** |  | 121.12d? | 2008-02-18 | 2008-07-24 | 16.13d |  | 54h |  |
| 189 | 1.1.12.3.1 | 提交系统测试申请 |  | 0.13d? | 2008-07-24 | 2008-07-24 | 16.13d | 项目经理 | 1h |  |
| 190 | 1.1.12.3.2 | 审核系统测试申请 |  | 0.13d? | 2008-02-29 | 2008-02-29 | 127.19d | 测试负责人 | 1h |  |
| 191 | 1.1.12.3.3 | 建立系统测试环境 |  | 1.07d? | 2008-03-03 | 2008-03-04 | 125.06d | 测试负责人 | 8h |  |
| 192 | 1.1.12.3.4 | 进行系统测试 |  | 2.13d? | 2008-02-18 | 2008-02-26 | 129.99d | 测试负责人; 测试工程师 | 16h |  |
| 193 | 1.1.12.3.5 | 修改缺陷 |  | 1.07d? | 2008-04-16 | 2008-04-17 | 90.33d | 开发工程师 | 8h |  |
| 194 | 1.1.12.3.6 | 回归测试 |  | 2.13d? | 2008-02-18 | 2008-02-27 | 128.92d | 测试负责人; 测试工程师 | 16h |  |
| 195 | 1.1.12.3.7 | 提交系统测试报告 |  | 0.53d? | 2008-03-04 | 2008-03-04 | 124.52d | 测试负责人 | 4h |  |
| 196 | 1.1.13 | 可以发布 | milestone | 0d | 2008-01-30 | 2008-01-30 | 142.59d |  |  |  |
| 197 | 1.1.14 | **系统发布** |  | 140.46d? | 2008-01-30 | 2008-08-12 | 2.13d |  | 337.5h |  |
| 198 | 1.1.14.1 | **外部版本发布** |  | 122.19d? | 2008-02-18 | 2008-07-25 | 15.07d |  | 2h |  |
| 199 | 1.1.14.1.1 | 提交发布申请 |  | 0.13d? | 2008-07-25 | 2008-07-25 | 15.07d | 项目经理 | 1h |  |
| 200 | 1.1.14.1.2 | 审批发布申请 |  | 0.07d? | 2008-02-22 | 2008-02-22 | 132.92d | 部门经理 | 0.5h |  |
| 201 | 1.1.14.1.3 | 发出发布通知 |  | 0.07d? | 2008-02-18 | 2008-02-18 | 137.19d | SCM | 0.5h |  |
| 202 | 1.1.14.2 | **用户验收测试** |  | 129.66d? | 2008-01-30 | 2008-07-29 | 12.93d |  | 54.5h |  |
| 203 | 1.1.14.2.1 | **安装验收测试环境** |  | 1.07d? | 2008-04-18 | 2008-04-21 | 88.2d |  | 8h | key:186 |
| 204 | 1.1.14.2.1.1 | 客户方验收测试环境安装 |  | 1.07d? | 2008-04-18 | 2008-04-21 | 88.2d | 开发工程师 | 8h | key:187 |

Notes:
- 183: Test environment includes hardware, software, communication etc
- 184: Conduct system testing as per the System Test Plan and Test Cases designed for this purpose
- 185: Fix System testing defects
- 186: Repeat next level of test cycle
- 191: Test environment includes hardware, software, communication etc
- 192: Conduct system testing as per the System Test Plan and Test Cases designed for this purpose
- 193: Fix System testing defects
- 194: Repeat next level of test cycle
- 201: Release all program units pertaining to this stage as per Release note
- 203: Install the application software in the site environment.
- 204: Install the application software components.

| ID | WBS | Task | Type | Duration | Start | Finish | Total slack | Resources | Work | Text8 |
| --- | --- | --- | --- | --- | --- | --- | --- | --- | --- | --- |
| 205 | 1.1.14.2.2 | **客户现场测试** |  | 129.66d? | 2008-01-30 | 2008-07-29 | 12.93d |  | 46.5h | key:188 |
| 206 | 1.1.14.2.2.1 | 测试现场系统安装 |  | 0.53d? | 2008-04-21 | 2008-04-22 | 87.66d | 开发工程师 | 4h |  |
| 207 | 1.1.14.2.2.2 | 执行用户验收测试 |  | 1d? | 2008-01-30 | 2008-01-30 | 141.59d | 客户代表 | 7.5h |  |
| 208 | 1.1.14.2.2.3 | 提供测试支持 |  | 1.07d? | 2008-03-11 | 2008-04-07 | 99.2d | 项目经理; 技术经理; 开发工程师 | 8h | key:189 |
| 209 | 1.1.14.2.2.4 | 获取测试结果 |  | 1.07d? | 2008-07-28 | 2008-07-29 | 13.07d | 项目经理 | 8h |  |
| 210 | 1.1.14.2.2.5 | 修改并关闭缺陷 |  | 2.4d? | 2008-04-22 | 2008-04-25 | 84.73d | 开发工程师 | 18h |  |
| 211 | 1.1.14.2.2.6 | 获取验收测试报告 |  | 0.13d? | 2008-07-29 | 2008-07-29 | 12.93d | 项目经理 | 1h |  |
| 212 | 1.1.14.3 | **发布版本发布** |  | 135.12d? | 2008-02-18 | 2008-08-12 | 2.13d |  | 15h |  |
| 213 | 1.1.14.3.1 | 发布资料开发 |  | 1.6d? | 2008-04-17 | 2008-04-21 | 88.73d | 开发工程师 | 12h |  |
| 214 | 1.1.14.3.2 | 提交SCM建立发布基线 |  | 0.13d? | 2008-08-12 | 2008-08-12 | 2.13d | 项目经理 | 1h |  |
| 215 | 1.1.14.3.3 | 提交发布申请 |  | 0.13d? | 2008-07-25 | 2008-07-25 | 15.07d | 项目经理 | 1h |  |
| 216 | 1.1.14.3.4 | 审批发布申请 |  | 0.07d? | 2008-02-22 | 2008-02-22 | 132.92d | 部门经理 | 0.5h |  |
| 217 | 1.1.14.3.5 | 发出发布通知 |  | 0.07d? | 2008-02-18 | 2008-02-18 | 137.19d | SCM | 0.5h |  |
| 218 | 1.1.14.4 | **用户培训** |  | 31.59d? | 2008-01-30 | 2008-03-21 | 111d |  | 96h | key:117 |
| 219 | 1.1.14.4.1 | 制定培训计划 |  | 0.53d? | 2008-01-30 | 2008-01-30 | 142.06d | 项目经理 | 4h | key:118 |
| 220 | 1.1.14.4.2 | 制定课程设计的标准及指引 |  | 1.07d? | 2008-01-30 | 2008-01-31 | 140.99d | 项目经理 | 8h | key:119 |
| 221 | 1.1.14.4.3 | 培训课程准备 |  | 3.47d? | 2008-01-31 | 2008-02-03 | 138.06d | 开发工程师 | 26h | key:120 |
| 222 | 1.1.14.4.4 | 培训准备 |  | 3.47d? | 2008-01-31 | 2008-02-03 | 138.06d | 开发工程师 | 26h | key:120 |
| 223 | 1.1.14.4.5 | 客户培训 |  | 4.27d? | 2008-03-17 | 2008-03-21 | 111d | 开发工程师 | 32h |  |
| 224 | 1.1.14.5 | 可以上线试运行 | milestone | 0d | 2008-01-30 | 2008-01-30 | 142.59d |  |  |  |
| 225 | 1.1.14.6 | **试运行** |  | 42.5d? | 2008-01-30 | 2008-04-04 | 100.09d |  | 84h |  |
| 226 | 1.1.14.6.1 | 上线环境部署 |  | 2.26d? | 2008-03-07 | 2008-04-04 | 100.09d | 项目经理; 技术经理; 开发工程师 | 24h |  |
| 227 | 1.1.14.6.2 | 试运行 | milestone | 7.73d | 2008-01-30 | 2008-02-22 | 131.94d | 项目经理; 技术经理; 开发工程师 | 60h |  |
| 228 | 1.1.14.7 | 可以验收 |  | 1.07d? | 2008-01-30 | 2008-01-30 | 141.52d |  |  |  |

Notes:
- 205: Generally acceptance testing is conducted at customer site
- 208: Provide complete support to the acceptance testing as per the contractual agreement
- 217: Release all program units pertaining to this stage as per Release note
- 218: Design a training plan to prepare all impacted staff for the new system.
- 219: Develop a Training Plan to train all impacted staff, covering the approach, participants, and roles and responsibilities.
- 220: Develop standards and guidelines for the design of the contents of the training materials.
- 221: Prepare the deliverable for presentation and present it to the Acceptor.

| ID | WBS | Task | Type | Duration | Start | Finish | Total slack | Resources | Work | Text8 |
| --- | --- | --- | --- | --- | --- | --- | --- | --- | --- | --- |
| 229 | 1.1.14.8 | **项目初验** |  | 125.39d? | 2008-02-18 | 2008-07-30 | 11.87d |  | 13h |  |
| 230 | 1.1.14.8.1 | 提交初验申请 |  | 0.13d? | 2008-07-30 | 2008-07-30 | 11.87d | 项目经理 | 1h |  |
| 231 | 1.1.14.8.2 | 客户审批初验申请 |  | 0.13d? | 2008-02-18 | 2008-02-18 | 137.12d | 客户代表 | 1h |  |
| 232 | 1.1.14.8.3 | 项目初验会议 |  | 1.07d? | 2008-02-18 | 2008-02-29 | 127.48d | 部门经理; 项目经理; 技术经理; 市场代表; 售前工程师 | 10h |  |
| 233 | 1.1.14.8.4 | 签署初验报告 |  | 0.13d? | 2008-02-18 | 2008-02-27 | 129.02d | 项目经理; 客户代表 | 1h |  |
| 234 | 1.1.14.9 | **结项、归档** |  | 132.19d? | 2008-02-01 | 2008-08-05 | 7.73d |  | 73h |  |
| 235 | 1.1.14.9.1 | 评估客户满意度 |  | 0.07d? | 2008-07-31 | 2008-07-31 | 10.87d | 项目经理; 客户代表 | 1h | key:255 |
| 236 | 1.1.14.9.2 | 总结项目经验教训 |  | 0.91d? | 2008-02-18 | 2008-02-27 | 128.89d | 项目经理; 技术经理; 开发工程师; 美术工程师; 测试负责人; SQA; SCM | 8h | key:256 |
| 237 | 1.1.14.9.3 | 评审和确认项目成员效能 |  | 1.07d? | 2008-03-11 | 2008-04-08 | 98.67d | 项目经理; 技术经理 | 8h | key:257 |
| 238 | 1.1.14.9.4 | 评审分析项目费用情况 |  | 1.07d? | 2008-08-01 | 2008-08-04 | 8.8d | 项目经理 | 8h | key:258 |
| 239 | 1.1.14.9.5 | 项目总结会议 |  | 2.56d? | 2008-02-01 | 2008-02-25 | 131.39d | 部门经理; 项目经理; 技术经理; 市场代表; 售前工程师; 测试负责人; 开发工程师; 美术工程师; SQA; SCM | 24h |  |
| 240 | 1.1.14.9.6 | 项目资料移交、归档 |  | 1.07d? | 2008-08-04 | 2008-08-05 | 7.73d | 项目经理 | 8h | key:259 |
| 241 | 1.1.14.9.7 | 项目归档审计 |  | 2.13d? | 2008-03-05 | 2008-03-07 | 121.7d | SQA | 16h |  |
| 242 | 1.1.15 | 可以进入系统免费维护期 | milestone | 1d? | 2008-01-30 | 2008-01-30 | 141.59d |  |  |  |
| 243 | 1.1.16 | **系统维护** |  | 12.51d? | 2008-01-30 | 2008-02-26 | 130.08d |  | 78h |  |
| 244 | 1.1.16.1 | 启动维护流程 |  | 0.13d? | 2008-02-25 | 2008-02-25 | 131.79d | 部门经理 | 1h |  |
| 245 | 1.1.16.2 | 编写维护计划 |  | 1.07d? | 2008-01-30 | 2008-01-30 | 141.52d | 一级维护人员 | 8h |  |
| 246 | 1.1.16.3 | 维护计划审批 |  | 0.13d? | 2008-02-26 | 2008-02-26 | 130.08d | 部门经理 | 1h |  |
| 247 | 1.1.16.4 | 维护工作交接 |  | 1.81d? | 2008-01-30 | 2008-02-03 | 137.79d | 部门经理; 项目经理; 一级维护人员; 二级维护负责人 | 16h |  |
| 248 | 1.1.16.5 | 召开维护启动会议 |  | 1.33d? | 2008-01-31 | 2008-02-21 | 133.79d | 部门经理; 项目经理; 一级维护人员; 二级维护负责人; SQA | 10h |  |
| 249 | 1.1.16.6 | 执行维护任务 |  | 5.6d? | 2008-02-01 | 2008-02-21 | 134d | 一级维护人员 | 42h |  |
| 250 | 1.1.17 | 免费维护期结束，可以终验 | milestone | 1d? | 2008-01-30 | 2008-01-30 | 141.59d |  |  |  |
| 251 | 1.1.18 | **项目终验** |  | 137.26d? | 2008-02-18 | 2008-08-14 | 0d |  | 15h |  |
| 252 | 1.1.18.1 | 提交终验申请 |  | 0.13d? | 2008-08-14 | 2008-08-14 | 0d | 项目经理 | 1h |  |
| 253 | 1.1.18.2 | 客户审批终验申请 |  | 0.13d? | 2008-02-18 | 2008-02-18 | 137.12d | 客户代表 | 1h |  |
| 254 | 1.1.18.3 | 项目终验会议 |  | 1.33d? | 2008-02-18 | 2008-03-03 | 126.15d | 部门经理; 项目经理; 技术经理; 售前工程师; 市场代表; 客户代表 | 12h |  |
| 255 | 1.1.18.4 | 签署终验报告 |  | 0.13d? | 2008-02-18 | 2008-03-06 | 122.62d | 项目经理; 客户代表 | 1h |  |
| 256 | 1.1.19 | 开发合同终止 | milestone | 0d | 2008-01-30 | 2008-01-30 | 142.59d |  |  |  |

Notes:
- 235: Document the overall satisfaction with the project.
- 236: Work with the project team to capture relevant experience and lessons learned for the benefit of future projects.
- 237: Complete performance reviews for each team member, recognize efforts and accomplishments, and celebrate success.
- 238: Make sure that all invoices have been delivered and all payments made.
- 240: Update and archive project documentation and make sure that all close out conditions have been met.

| ID | WBS | Task | Duration | Start | Finish | Total slack | Constraint | Calendar | Resources | Work | Text8 |
| --- | --- | --- | --- | --- | --- | --- | --- | --- | --- | --- | --- |
| 257 | 1.2 | **项目通用活动** | 140.86d? | 2008-01-31 | 2008-08-14 | 0.13d |  |  |  | 298.68h |  |
| 258 | 1.2.1 | **项目管理** | 43.92d? | 2008-02-18 | 2008-04-15 | 93.33d |  |  |  | 81.44h |  |
| 259 | 1.2.1.1 | 管理范围和需求 | 1.07d? | 2008-04-14 | 2008-04-15 | 93.33d |  |  | 项目经理 [5%] | 0.4h | key:231 |
| 260 | 1.2.1.2 | 控制进度 | 1.07d? | 2008-04-14 | 2008-04-15 | 93.33d |  |  | 项目经理 [10%] | 0.8h | key:236 |
| 261 | 1.2.1.3 | 管理风险 | 1.07d? | 2008-04-11 | 2008-04-14 | 94.4d |  |  | 项目经理 [5%] | 0.4h | key:239 |
| 262 | 1.2.1.4 | 管理费用 | 1.07d? | 2008-04-10 | 2008-04-11 | 95.47d |  |  | 项目经理 [3%] | 0.24h | key:241 |
| 263 | 1.2.1.5 | 控制质量 | 1.07d? | 2008-04-10 | 2008-04-11 | 95.47d |  |  | 项目经理 [20%] | 1.6h | key:245 |
| 264 | 1.2.1.6 | **项目周例会（与客户）** | 26.8d | 2008-02-18 | 2008-03-24 | 110.46d |  | 标准 |  | 24h |  |
| 265 | 1.2.1.6.1 | 项目周例会（与客户） 1 | 0.13d | 2008-02-18 | 2008-02-18 | 137.12d | start no earlier than 2008-02-18 | 标准 | 项目经理; 技术经理; 需求分析师; 客户代表 | 4h |  |
| 266 | 1.2.1.6.2 | 项目周例会（与客户） 2 | 0.13d | 2008-02-25 | 2008-02-25 | 131.79d | start no earlier than 2008-02-25 | 标准 | 项目经理; 技术经理; 需求分析师; 客户代表 | 4h |  |
| 267 | 1.2.1.6.3 | 项目周例会（与客户） 3 | 0.13d | 2008-03-03 | 2008-03-03 | 126.46d | start no earlier than 2008-03-03 | 标准 | 项目经理; 技术经理; 需求分析师; 客户代表 | 4h |  |
| 268 | 1.2.1.6.4 | 项目周例会（与客户） 4 | 0.13d | 2008-03-10 | 2008-03-10 | 121.12d | start no earlier than 2008-03-10 | 标准 | 项目经理; 技术经理; 需求分析师; 客户代表 | 4h |  |
| 269 | 1.2.1.6.5 | 项目周例会（与客户） 5 | 0.13d | 2008-03-17 | 2008-03-17 | 115.79d | start no earlier than 2008-03-17 | 标准 | 项目经理; 技术经理; 需求分析师; 客户代表 | 4h |  |
| 270 | 1.2.1.6.6 | 项目周例会（与客户） 6 | 0.13d | 2008-03-24 | 2008-03-24 | 110.46d | start no earlier than 2008-03-24 | 标准 | 项目经理; 技术经理; 需求分析师; 客户代表 | 4h |  |
| 271 | 1.2.1.7 | **项目周例会（内部）** | 26.8d | 2008-02-18 | 2008-03-24 | 110.46d |  | 标准 |  | 42h |  |
| 272 | 1.2.1.7.1 | 项目周例会（内部） 1 | 0.13d | 2008-02-18 | 2008-02-18 | 137.12d | start no earlier than 2008-02-18 | 标准 | 项目经理; 技术经理; 测试负责人; 开发工程师; 需求分析师; 系统分析员; SQA | 7h |  |
| 273 | 1.2.1.7.2 | 项目周例会（内部） 2 | 0.13d | 2008-02-25 | 2008-02-25 | 131.79d | start no earlier than 2008-02-25 | 标准 | 项目经理; 技术经理; 测试负责人; 开发工程师; 需求分析师; 系统分析员; SQA | 7h |  |
| 274 | 1.2.1.7.3 | 项目周例会（内部） 3 | 0.13d | 2008-03-03 | 2008-03-03 | 126.46d | start no earlier than 2008-03-03 | 标准 | 项目经理; 技术经理; 测试负责人; 开发工程师; 需求分析师; 系统分析员; SQA | 7h |  |
| 275 | 1.2.1.7.4 | 项目周例会（内部） 4 | 0.13d | 2008-03-10 | 2008-03-10 | 121.12d | start no earlier than 2008-03-10 | 标准 | 项目经理; 技术经理; 测试负责人; 开发工程师; 需求分析师; 系统分析员; SQA | 7h |  |
| 276 | 1.2.1.7.5 | 项目周例会（内部） 5 | 0.13d | 2008-03-17 | 2008-03-17 | 115.79d | start no earlier than 2008-03-17 | 标准 | 项目经理; 技术经理; 测试负责人; 开发工程师; 需求分析师; 系统分析员; SQA | 7h |  |
| 277 | 1.2.1.7.6 | 项目周例会（内部） 6 | 0.13d | 2008-03-24 | 2008-03-24 | 110.46d | start no earlier than 2008-03-24 | 标准 | 项目经理; 技术经理; 测试负责人; 开发工程师; 需求分析师; 系统分析员; SQA | 7h |  |
| 278 | 1.2.1.8 | **项目周报** | 26.93d | 2008-02-18 | 2008-03-24 | 110.32d |  | 标准 |  | 12h |  |
| 279 | 1.2.1.8.1 | 项目周报 1 | 0.27d | 2008-02-18 | 2008-02-18 | 136.99d | start no earlier than 2008-02-18 | 标准 | 项目经理 | 2h |  |
| 280 | 1.2.1.8.2 | 项目周报 2 | 0.27d | 2008-02-25 | 2008-02-25 | 131.66d | start no earlier than 2008-02-25 | 标准 | 项目经理 | 2h |  |
| 281 | 1.2.1.8.3 | 项目周报 3 | 0.27d | 2008-03-03 | 2008-03-03 | 126.32d | start no earlier than 2008-03-03 | 标准 | 项目经理 | 2h |  |
| 282 | 1.2.1.8.4 | 项目周报 4 | 0.27d | 2008-03-10 | 2008-03-10 | 120.99d | start no earlier than 2008-03-10 | 标准 | 项目经理 | 2h |  |
| 283 | 1.2.1.8.5 | 项目周报 5 | 0.27d | 2008-03-17 | 2008-03-17 | 115.66d | start no earlier than 2008-03-17 | 标准 | 项目经理 | 2h |  |
| 284 | 1.2.1.8.6 | 项目周报 6 | 0.27d | 2008-03-24 | 2008-03-24 | 110.32d | start no earlier than 2008-03-24 | 标准 | 项目经理 | 2h |  |

Notes:
- 259: Maintain a comprehensive, clear, and measurable definition of the project scope and requirements.
- 260: Maintaining the Project Schedule to ensure it remains accurate and current based on approved Change Requests and revised estimates to complete from Project Team Members.
- 261: Managing the Risk Log and acting on Risk Management Action Plans as required to ensure the project stays on schedule.
- 262: Manage the monthly cash flow of the project, including the forecasted estimates to complete for the remainder of the project.
- 263: Implement and manage a program to ensure the project quality and implement continual improvement of work operations.
- 279: Summarize and communicate the accomplishments for the reporting period, the objectives for the coming period, problems (if any), the status of outstanding risk items, and suggestions for dealing with issues and problems.

| ID | WBS | Task | Duration | Start | Finish | Total slack | Constraint | Resources | Work | Text8 |
| --- | --- | --- | --- | --- | --- | --- | --- | --- | --- | --- |
| 285 | 1.2.2 | **QA 活动** | 87.39d? | 2008-02-18 | 2008-06-10 | 49.87d |  |  | 27.24h |  |
| 286 | 1.2.2.1 | **接受QA周例行检查** | 27.73d | 2008-02-18 | 2008-03-24 | 109.52d |  |  | 6.24h |  |
| 287 | 1.2.2.1.1 | 接受周例行检查 1 | 1.07d | 2008-02-18 | 2008-02-18 | 136.19d | start no earlier than 2008-02-18 | 项目经理 [13%] | 1.04h |  |
| 288 | 1.2.2.1.2 | 接受周例行检查 2 | 1.07d | 2008-02-25 | 2008-02-25 | 130.86d | start no earlier than 2008-02-25 | 项目经理 [13%] | 1.04h |  |
| 289 | 1.2.2.1.3 | 接受周例行检查 3 | 1.07d | 2008-03-03 | 2008-03-03 | 125.52d | start no earlier than 2008-03-03 | 项目经理 [13%] | 1.04h |  |
| 290 | 1.2.2.1.4 | 接受周例行检查 4 | 1.07d | 2008-03-10 | 2008-03-10 | 120.19d | start no earlier than 2008-03-10 | 项目经理 [13%] | 1.04h |  |
| 291 | 1.2.2.1.5 | 接受周例行检查 5 | 1.07d | 2008-03-17 | 2008-03-17 | 114.86d | start no earlier than 2008-03-17 | 项目经理 [13%] | 1.04h |  |
| 292 | 1.2.2.1.6 | 接受周例行检查 6 | 1.07d | 2008-03-24 | 2008-03-24 | 109.52d | start no earlier than 2008-03-24 | 项目经理 [13%] | 1.04h |  |
| 293 | 1.2.2.2 | 关闭周例行检查发现 | 46.67d? | 2008-04-10 | 2008-06-10 | 49.87d |  | 项目经理 [6%] | 21h |  |
| 294 | 1.2.3 | **CM 活动** | 31.19d? | 2008-02-18 | 2008-03-28 | 106.06d |  |  | 126h |  |
| 295 | 1.2.3.1 | 配置库创建及维护 | 2.4d? | 2008-02-20 | 2008-03-25 | 108.6d |  | 项目经理; SCM | 18h | key:200 |
| 296 | 1.2.3.2 | 基线管理 | 2.67d? | 2008-02-20 | 2008-03-26 | 107.93d |  | 项目经理; SCM | 20h | key:201 |
| 297 | 1.2.3.3 | 配置项变更管理 | 2.13d? | 2008-02-18 | 2008-03-03 | 126.57d |  | 项目经理; SCM | 16h |  |
| 298 | 1.2.3.4 | 发布管理 | 1.07d? | 2008-02-21 | 2008-03-28 | 106.06d |  | SCM; 项目经理 | 8h | key:202 |
| 299 | 1.2.3.5 | 配置审计 | 3.2d? | 2008-02-18 | 2008-02-20 | 134.06d |  | SCM | 24h |  |
| 300 | 1.2.3.6 | 接受QA审计 | 3.2d? | 2008-02-18 | 2008-03-07 | 122.31d |  | 项目经理; 开发工程师; SCM | 24h |  |
| 301 | 1.2.3.7 | 关闭QA审计发现的配置管理问题 | 2.13d? | 2008-02-18 | 2008-03-13 | 117.71d |  | 项目经理; SCM | 16h |  |
| 302 | 1.2.4 | **项目专门的培训** | 1.07d? | 2008-01-31 | 2008-02-01 | 139.92d |  |  | 8h |  |
| 303 | 1.2.4.1 | [培训课程名] | 1.07d? | 2008-01-31 | 2008-02-01 | 139.92d |  | Trainer | 8h | key:195 |
| 304 | 1.2.5 | **质量改进活动** | 1.07d? | 2008-08-13 | 2008-08-14 | 0.13d |  |  | 8h |  |
| 305 | 1.2.5.1 | [Quality Improvement Initiatives Task Name] | 1.07d? | 2008-08-13 | 2008-08-14 | 0.13d |  | 项目经理 | 8h |  |
| 306 | 1.2.6 | **缺陷预防活动** | 22.3d? | 2008-03-05 | 2008-04-03 | 101.16d |  |  | 24h |  |
| 307 | 1.2.6.1 | [Defect Prevention Task Name] | 3.18d? | 2008-03-05 | 2008-04-03 | 101.16d |  | 项目经理; 技术经理; 测试负责人 | 24h |  |
| 308 | 1.2.7 | **知识管理活动** | 21.8d? | 2008-02-19 | 2008-03-18 | 114.06d |  |  | 24h |  |
| 309 | 1.2.7.1 | [Knowledge Management Task Name] | 3.2d? | 2008-02-19 | 2008-03-18 | 114.06d |  | 项目经理; 技术经理; SCM | 24h |  |

Notes:
- 303: Provide staff, such as application, operations, and program maintenance personnel, with the knowledge and skills necessary to support the new system.

| ID | WBS | Task | Duration | Start | Finish | Total slack |
| --- | --- | --- | --- | --- | --- | --- |
| 310 | 2 | **非项目的工作** | 1.07d? | 2008-01-30 | 2008-01-30 | 141.52d |
| 311 | 2.1 | [Non-Project Task Name] | 1.07d? | 2008-01-30 | 2008-01-30 | 141.52d |
